# Предварительный план2007

Schedule from MS Project, 2013-04-22 to 2014-11-27, A marks actual dates.

## Calendars

- Стандартный: Mon-Fri 09:00-13:00, 14:00-18:00; Sat-Sun off. Exceptions (off unless hours are given): 2013-05-01 to 2013-05-05 (Первое мая), 2013-05-09 to 2013-05-12 (Девятое мая), 2013-12-30 to 2014-01-08 (новый год), 2014-05-01 to 2014-05-04 (Первое мая 2014), 2014-05-09 to 2014-05-11 (Девятое мая 2014).

## Resources

| Resource |
| --- |
| Шилин Роман |
| Аналитик |
| Андрей Пирожков |
| Тугушев Илья |
| Денис Митавский |
| Алексей Львов |
| Андрей Карандей |
| Валерий Мацукевич |
| Java разработчик3 |
| Java разработчик4 |
| WEB-дизайнер |
| Влад Симоненко |
| Андрей Цветков |
| Java разработчик5 |
| Тест Аналитик |
| Java разработчик6 |
| Тестировщик |
| Технический писатель |
| Технолог - администратор |
| Технический писатель2 |
| Системный аналитик1 |
| Системный аналитик2 |
| Системный аналитик3 |
| Системный аналитик4 |
| Владимир Панов |
| Сергей Кашанский |
| Роман Митинков |
| Роман Болотов |
| Глеб Ноздрачев |
| Евгения Капустина |
| Эдуард Михайлов |
| Тимофей Билый |
| (БТЛ) Михаил Ларин |
| (БТЛ) Олег Еренцов |
| (БТЛ) Дмитрий Лякин |
| (БТЛ)Сергей Степыгин |
| Ярослав Бондарчук |
| Александр Власюк |
| Евгений Баланенко |
| Евгений Сафроненко |
| Сергей Околот |
| Леся Пуховая |
| Наталья Смолянец (Смолянец) |
| Антон Ганчев (Киев) |
| Тимофей Щербатый |
| Пестова Ольга (Киев) |
| Игорь Петров |

## Schedule

| ID | WBS | Task | Type | Duration | Start | Finish | Predecessors | Complete | Remaining | Total slack | Free slack | Constraint | Resources | Work | Actual work |
| --- | --- | --- | --- | --- | --- | --- | --- | --- | --- | --- | --- | --- | --- | --- | --- |
| 1 | 1 | **Разработка версии CM4/5** |  | 403d? | 2013-04-22 A | 2014-11-27 |  | 35% | 263.78d? | 0d |  |  |  | 33655.4h | 10673.5h |
| 2 | 1.1 | Принято решение о начале разработки | milestone | 0d | 2013-04-22 | 2013-04-22 |  |  |  | 0d |  | start no earlier than 2013-04-22 |  |  |  |
| 3 | 1.2 | Управление проектом |  | 267d | 2013-04-22 A | 2014-05-21 | 2 | 35% | 173.55d | 117d |  |  | Шилин Роман | 2136h | 747.6h |
| 4 | 1.3 | **Управление требованиями** |  | 331d | 2013-05-27 A | 2014-09-16 | 2 | 19% | 268.4d | 52d |  |  | Аналитик | 4567.2h | 1034.44h |
| 5 | 1.3.1 | Выделен аналитик на проект | milestone | 0d | 2013-05-27 A | 2013-05-27 A |  | 100% |  |  |  | start no earlier than 2013-05-27 |  |  |  |
| 6 | 1.3.2 | Формирование скоупа проекта _ верхний уровень |  | 15d | 2013-05-27 A | 2013-06-14 A | 5 | 100% |  |  |  |  | Евгения Капустина | 120h | 120h |
| 7 | 1.3.3 | Скоуп на систему сформирован и утвержден | milestone | 0d | 2013-06-21 A | 2013-06-21 A | 6FS+5d | 100% |  |  |  |  |  |  |  |
| 8 | 1.3.4 | Сопровождение требований |  | 311d | 2013-06-24 A | 2014-09-16 | 5, 7 | 15% | 264.35d | 33d |  |  | Эдуард Михайлов; Евгения Капустина | 1799.2h | 503.8h |
| 9 | 1.4 | **Создание модуля "Делопроизводство" (документоориентированная среда)** |  | 403d? | 2013-04-22 A | 2014-11-27 |  | 36% | 256.64d? | 0d |  |  |  | 26952.2h | 8891.44h |
| 10 | 1.4.1 | Первичные требования для создания модуля "Делопроизводство" подготовлены | milestone | 0d | 2013-04-22 | 2013-04-22 | 2 |  |  | 0d |  | finish no earlier than 2012-04-02 |  |  |  |
| 11 | 1.4.2 | **Апробация идей прототипа** |  | 24d | 2013-04-29 A | 2013-06-06 |  | 99% | 0d | 374d |  |  |  | 144h | 144h |
| 12 | 1.4.2.1 | Пирожков доступен | milestone | 0d | 2013-06-03 | 2013-06-03 |  |  |  | 378d |  | start no earlier than 2013-06-03 |  |  |  |
| 13 | 1.4.2.2 | Проведение предварительных испытаний системы |  | 9d | 2013-04-29 A | 2013-05-16 A | 10FS+5d | 100% |  |  |  |  | Андрей Цветков | 72h | 72h |
| 14 | 1.4.2.3 | Описание обработки ВХ. Док. На примере технологий прототипа |  | 9d | 2013-05-20 A | 2013-06-06 A |  | 100% |  |  |  | start no earlier than 2013-05-20 | Андрей Пирожков | 72h | 72h |
| 15 | 1.4.3 | **Настройка инфраструктуры** |  | 37d | 2013-05-20 A | 2013-07-09 | 24 | 67% | 12.33d | 214.94d | 0d |  |  | 120h | 80h |
| 16 | 1.4.3.1 | Настройка непрерывной интеграции |  | 4d | 2013-05-20 A | 2013-05-23 A |  | 100% |  |  |  |  | Тугушев Илья | 32h | 32h |
| 17 | 1.4.3.2 | Поддержка UNIT-тестирования и интеграционного тестирования на уроне среды непрерывной интеграции |  | 5d | 2013-06-04 | 2013-06-10 |  |  |  | 235.94d |  | start no earlier than 2013-06-04 | Тугушев Илья | 40h |  |
| 18 | 1.4.3.3 | Репакеджинг проекта |  | 3d | 2013-05-27 A | 2013-05-29 A |  | 100% |  |  |  | start no earlier than 2013-05-27 | Сергей Кашанский | 24h | 24h |
| 19 | 1.4.3.4 | Автоматическое заполнение параметров JDBC через Maven |  | 3d | 2013-07-05 A | 2013-07-09 A | 30 | 100% |  |  |  |  | Андрей Цветков | 24h | 24h |
| 20 | 1.4.4 | **Проектирование и формирование ядра системы** |  | 323d? | 2013-04-22 A | 2014-08-07 | 10 | 42% | 188.48d? | 12d | 0d |  |  | 17925.8h | 6888.24h |
| 21 | 1.4.4.1 | **Определение структуры модуля Делопроизводство** |  | 25d | 2013-04-22 A | 2013-05-31 A |  | 100% |  |  |  |  |  | 352h | 352h |
| 22 | 1.4.4.1.1 | Разбивка на слои |  | 5d | 2013-04-22 A | 2013-04-26 A |  | 100% |  |  |  |  | Денис Митавский [50%]; Андрей Пирожков [50%] | 40h | 40h |
| 23 | 1.4.4.1.2 | Конфигурации, загрузка и инициализация системы в базовой конфигурации |  | 5d | 2013-04-29 A | 2013-05-08 A | 22 | 100% |  |  |  |  | Валерий Мацукевич; Денис Митавский [50%] | 60h | 60h |
| 24 | 1.4.4.1.3 | Базовая конфигурация объектов системы |  | 5d | 2013-05-13 A | 2013-05-17 A | 22, 23 | 100% |  |  |  |  | Денис Митавский [50%]; Валерий Мацукевич | 60h | 60h |
| 25 | 1.4.4.1.4 | Юнит-тестирование - базис |  | 6d | 2013-05-17 A | 2013-05-24 A | 13 | 100% |  |  |  |  | Денис Митавский [50%]; Андрей Цветков | 72h | 72h |
| 26 | 1.4.4.1.5 | Базовая имплементация слоя DAO |  | 5d | 2013-05-20 A | 2013-05-24 A | 24 | 100% |  |  |  |  | Валерий Мацукевич | 40h | 40h |
| 27 | 1.4.4.1.6 | Обеспечение программных компонет верификации первой очереди |  | 5d | 2013-05-27 A | 2013-05-31 A | 26 | 100% |  |  |  |  | Валерий Мацукевич; Андрей Цветков | 80h | 80h |

Notes:
- 27: UNIT тестирование в рамках наработанного кода

| ID | WBS | Task | Type | Duration | Start | Finish | Predecessors | Complete | Remaining | Total slack | Constraint | Resources | Work | Actual work |
| --- | --- | --- | --- | --- | --- | --- | --- | --- | --- | --- | --- | --- | --- | --- |
| 28 | 1.4.4.2 | **DAO** |  | 43d? | 2013-06-03 A | 2013-07-31 A | 26, 27 | 100% |  |  |  |  | 224h | 224h |
| 29 | 1.4.4.2.1 | DAO для бизнес-объектов |  | 7d | 2013-06-03 A | 2013-06-11 A |  | 100% |  |  |  | Валерий Мацукевич | 56h | 56h |
| 30 | 1.4.4.2.2 | DAO для коллекций |  | 13d | 2013-06-12 A | 2013-07-04 A | 29 | 100% |  |  |  | Андрей Цветков | 104h | 104h |
| 31 | 1.4.4.2.3 | Функционал системы готов для проведения проектирования интеграции с GUI СМ4 | milestone | 0d | 2013-06-24 A | 2013-06-24 A | 29, 30 | 100% |  |  |  |  |  |  |
| 32 | 1.4.4.2.4 | DAO - утилитарные поля |  | 6d | 2013-06-25 A | 2013-07-08 A | 30 | 100% |  |  |  | Денис Митавский [50%] | 24h | 24h |
| 33 | 1.4.4.2.5 | DAO - кэш уровня транзакции |  | 5d? | 2013-07-25 A | 2013-07-31 A | 403 | 100% |  |  |  | Влад Симоненко | 40h | 40h |
| 34 | 1.4.4.3 | CRUD-сервис для бизнес-объектов |  | 10d | 2013-06-11 A | 2013-06-24 A | 30FF | 100% |  |  |  | Андрей Цветков | 80h | 80h |
| 35 | 1.4.4.4 | Расширение CRUD для интеграции с CMJ |  | 5d | 2013-08-08 A | 2013-08-14 A |  | 100% |  |  | start no earlier than 2013-08-08 | Андрей Карандей | 40h | 40h |
| 36 | 1.4.4.5 | Поддержка отсортированных дочерних бизнес-объектов |  | 5d | 2013-08-21 | 2013-08-27 | 53 |  |  | 248d |  | Валерий Мацукевич | 40h |  |
| 37 | 1.4.4.6 | Настройка Datasources/Jaas сервера приложений средствами Maven |  | 2d | 2013-07-05 A | 2013-07-08 A | 30 | 100% |  |  |  | Сергей Кашанский | 16h | 16h |
| 38 | 1.4.4.7 | Рефакторинг |  | 4d | 2013-07-03 A | 2013-07-08 A | 26 | 100% |  |  | start no earlier than 2013-07-03 | Валерий Мацукевич | 32h | 32h |
| 39 | 1.4.4.8 | **Права доступа** |  | 65d | 2013-06-12 A | 2013-09-10 |  | 90% | 6.54d | 238d |  |  | 488h | 426.8h |
| 40 | 1.4.4.8.1 | Права - оптимизация хранения (проектирование) |  | 30d | 2013-06-12 A | 2013-07-23 A | 29 | 100% |  |  |  | Андрей Пирожков [50%] | 120h | 120h |
| 41 | 1.4.4.8.2 | Описание существующими декларативными средствами конфигурации |  | 19d | 2013-07-16 A | 2013-08-09 A | 40, 19 | 100% |  |  |  | Андрей Цветков | 152h | 152h |
| 42 | 1.4.4.8.3 | Автофильтрация |  | 10d | 2013-07-29 A | 2013-08-16 A | 41 | 100% |  |  |  | Андрей Цветков | 80h | 80h |
| 43 | 1.4.4.8.4 | Пересчёт прав доступа |  | 17d | 2013-08-19 A | 2013-09-10 | 42 | 55% | 7.65d | 238d |  | Андрей Цветков | 136h | 74.8h |
| 44 | 1.4.4.9 | **Workflow - интеграция с Activiti** |  | 91d | 2013-06-07 A | 2013-10-11 A | 14 | 100% |  |  |  |  | 344h | 344h |
| 45 | 1.4.4.9.1 | Проектирование |  | 10d | 2013-06-07 A | 2013-07-24 A | 40 | 100% |  |  |  | Андрей Пирожков [50%] | 40h | 40h |
| 46 | 1.4.4.9.2 | готова постановка по БП | milestone | 0d | 2013-09-09 A | 2013-09-09 A |  | 100% |  |  | start no earlier than 2013-09-09 |  |  |  |
| 47 | 1.4.4.9.3 | Разработка |  | 20d | 2013-09-16 A | 2013-10-11 A | 45, 46 | 100% |  |  | start no earlier than 2013-09-16 | (БТЛ) Михаил Ларин | 160h | 160h |
| 48 | 1.4.4.9.4 | **Действия** |  | 18d | 2013-09-18 A | 2013-10-11 A |  | 100% |  |  |  |  | 144h | 144h |
| 49 | 1.4.4.9.4.1 | Концепция/Архитектура |  | 4d | 2013-09-18 A | 2013-09-23 A | 430 | 100% |  |  | start no earlier than 2013-09-16 | Денис Митавский | 32h | 32h |
| 50 | 1.4.4.9.4.2 | Реализация |  | 14d | 2013-09-24 A | 2013-10-11 A | 49 | 100% |  |  |  | (БТЛ) Михаил Ларин | 112h | 112h |
| 51 | 1.4.4.10 | **Наследование ???** |  | 8d | 2013-08-09 A | 2013-08-20 A | 45 | 100% |  |  |  | Андрей Пирожков [50%] | 88h | 88h |
| 52 | 1.4.4.10.1 | Проектирование функции "Наследование" |  | 2d | 2013-08-09 A | 2013-08-12 A |  | 100% |  |  | finish no earlier than 2013-08-12 | Андрей Пирожков | 16h | 16h |
| 53 | 1.4.4.10.2 | Разработка функции "Наследование" |  | 6d | 2013-08-13 A | 2013-08-20 A | 52 | 100% |  |  |  | Валерий Мацукевич | 48h | 48h |

Notes:
- 34: - проектирование базового API / - имплементация
- 36: Для отображени и поддержания заданного порядка следования объектов
- 40: Права доступа - оптимизация подхода, / подбор других названий сущностей (таблицы) переименовать таблицы и улучшить производительность
- 41: Права доступа - описание существующими декларативными средствами конфигурации / (для автоматического создания таблиц) + / конфигурирование под-запроса для фильтрации - там же
- 42: Права доступа - авто-фильтрация / + "внедрение в под-запросы"
- 44: Задачи: / - модель процесса (BPMN) / - Имплементация WF - сервиса , взаимодействие системы с Аctiviti
- 51: Архитектура - форма хранения данных (с учетом производительности) / Наследование типов объектов - уровень DAO

| ID | WBS | Task | Type | Duration | Start | Finish | Predecessors | Complete | Remaining | Total slack | Free slack | Constraint | Resources | Work | Actual work |
| --- | --- | --- | --- | --- | --- | --- | --- | --- | --- | --- | --- | --- | --- | --- | --- |
| 54 | 1.4.4.11 | **Коллекции** |  | 103d | 2013-05-29 A | 2013-10-18 |  | 56% | 45.06d | 210d |  |  |  | 300h | 188h |
| 55 | 1.4.4.11.1 | Коллекции - конфигурация |  | 3d | 2013-05-29 A | 2013-05-31 A |  | 100% |  |  |  |  | Денис Митавский | 24h | 24h |
| 56 | 1.4.4.11.2 | DAO - язык запросов коллекций |  | 12d | 2013-05-29 A | 2013-06-17 A | 55 | 100% |  |  |  |  | Сергей Кашанский; Денис Митавский [50%] | 140h | 140h |
| 57 | 1.4.4.11.3 | Сервис получения и получения счетчиков |  | 3d | 2013-05-29 A | 2013-05-31 A | 55 | 100% |  |  |  |  | Сергей Кашанский | 24h | 24h |
| 58 | 1.4.4.11.4 | Принято решение о работе с ПКД | milestone | 0d | 2013-10-01 | 2013-10-01 |  |  |  | 178d | 0d | start no earlier than 2013-10-01 | Денис Митавский [50%] |  |  |
| 59 | 1.4.4.11.5 | ПКД ???? |  | 14d | 2013-10-01 | 2013-10-18 | 56, 51, 58 |  |  | 178d |  |  | Валерий Мацукевич | 112h |  |
| 60 | 1.4.4.12 | **Бизнес-объекты (иерархии доменных объектов)** |  | 56.25d | 2013-07-24 A | 2013-10-10 |  | 90% | 5.79d | 216.75d |  |  |  | 228.8h | 200h |
| 61 | 1.4.4.12.1 | Проектирование |  | 8d | 2013-07-24 A | 2013-08-16 A | 62SF, 52 | 100% |  |  |  |  | Андрей Пирожков [20%] | 12.8h | 12.8h |
| 62 | 1.4.4.12.2 | Реализация1 |  | 3d | 2013-07-31 A | 2013-08-02 A | 428SF | 100% |  |  |  |  | Андрей Пирожков | 24h | 24h |
| 63 | 1.4.4.12.3 | Подготовка описания по обновленным принциапам работы |  | 24d | 2013-08-16 A | 2013-10-10 | 61 | 85% | 3.6d | 184.75d |  |  | Андрей Пирожков | 192h | 163.2h |
| 64 | 1.4.4.13 | **Поиск** |  | 97d | 2013-07-30 A | 2013-12-11 | 34 | 82% | 17.83d | 172d |  |  |  | 464h | 364h |
| 65 | 1.4.4.13.1 | Идея поиска оформлена | milestone | 0d | 2013-09-09 A | 2013-09-09 A |  | 100% |  |  |  | finish no earlier than 2013-09-09 |  |  |  |
| 66 | 1.4.4.13.2 | Поиск |  | 43d | 2013-07-30 A | 2013-11-06 A | 65 | 100% |  |  |  |  | Андрей Пирожков [50%]; Андрей Цветков | 264h | 264h |
| 67 | 1.4.4.13.3 | Полнотекстовый поиск |  | 25d | 2013-11-07 A | 2013-12-11 | 65, 66 | 50% | 12.5d | 172d |  | start no earlier than 2013-11-05 | Андрей Пирожков | 200h | 100h |
| 68 | 1.4.4.14 | **Слой сопряжения CMJ server (CM4)** |  | 257d? | 2013-06-25 A | 2014-07-03 |  | 25% | 191.81d? | 37d |  |  |  | 9813.04h | 2104.24h |
| 69 | 1.4.4.14.1 | Решение принято и ресурсы достуны | milestone | 0d | 2013-08-05 A | 2013-08-05 A |  | 100% |  |  |  | start no earlier than 2013-08-05 |  |  |  |
| 70 | 1.4.4.14.2 | Реализация коннекторов к платформе |  | 97.25d | 2013-08-08 A | 2013-12-23 | 69FS+3d | 29% | 69.25d | 138d | 0d |  |  |  |  |
| 71 | 1.4.4.14.3 | Описание решения есть. Можно начинать разработку | milestone | 0d | 2013-08-28 A | 2013-08-28 A |  | 100% |  |  |  | start no earlier than 2013-08-28 |  |  |  |
| 72 | 1.4.4.14.4 | Проработка задания выполнена, можно привлекать разработчиков БТЛ | milestone | 0d | 2013-09-18 A | 2013-09-18 A |  | 100% |  |  |  | start no earlier than 2013-09-18 |  |  |  |
| 73 | 1.4.4.14.5 | Рефакторинг СМ 4.2.1 выполнен | milestone | 0d | 2013-09-30 A | 2013-09-30 A |  | 100% |  |  |  | finish no earlier than 2013-09-30 |  |  |  |
| 74 | 1.4.4.14.6 | Структура хранения определена | milestone | 0d | 2013-10-28 A | 2013-10-28 A |  | 100% |  |  |  | finish no earlier than 2013-10-28 |  |  |  |
| 75 | 1.4.4.14.7 | Проектирование завершено - готовность к интеграции | milestone | 0d | 2013-09-23 | 2013-09-23 |  |  |  | 213.92d | 0d | start no earlier than 2013-09-23 |  |  |  |
| 76 | 1.4.4.14.8 | **Интеграция с CMJ по Внутренним Документам** |  | 99d? | 2013-09-23 A | 2014-02-18 | 75 | 84% | 16.08d? | 131d |  |  |  | 2464.24h | 2080.24h |
| 77 | 1.4.4.14.8.1 | MapperBuilder |  | 28d | 2013-09-23 A | 2013-10-30 A |  | 100% |  |  |  | finish no earlier than 2013-10-01 | Александр Власюк | 224h | 224h |
| 78 | 1.4.4.14.8.2 | Уточнение расширенной постановки по MapperBuilder выполнена | milestone | 0d | 2013-09-27 A | 2013-09-27 A |  | 100% |  |  |  | start no earlier than 2013-09-27 | Тугушев Илья [80%] |  |  |
| 79 | 1.4.4.14.8.3 | Конфиг ДОП СС |  | 1d | 2013-09-25 A | 2013-09-26 A |  | 100% |  |  |  |  | Глеб Ноздрачев [1%] | 0.08h | 0.08h |
| 80 | 1.4.4.14.8.4 | Mapper СС |  | 2d | 2013-10-31 A | 2013-11-01 A | 77, 79 | 100% |  |  |  |  | Глеб Ноздрачев [80%] | 12.8h | 12.8h |
| 81 | 1.4.4.14.8.5 | Конфиг ДОП Каталога |  | 3.75d? | 2013-09-24 A | 2013-09-27 A |  | 100% |  |  |  | start no earlier than 2013-09-24 | Глеб Ноздрачев [80%] | 24h | 24h |
| 82 | 1.4.4.14.8.6 | Mapper Каталога |  | 2d | 2013-12-03 A | 2013-12-04 A | 77, 81, 114 | 100% |  |  |  |  | Глеб Ноздрачев [80%] | 12.8h | 12.8h |
| 83 | 1.4.4.14.8.7 | Конфиг ДОП Портала |  | 3d? | 2013-09-25 A | 2013-09-27 A |  | 100% |  |  |  | start no earlier than 2013-09-25 | Евгений Баланенко | 24h | 24h |
| 84 | 1.4.4.14.8.8 | Mapper Портала |  | 2d | 2013-10-31 A | 2013-11-01 A | 77, 83 | 100% |  |  |  |  | Тугушев Илья [80%] | 12.8h | 12.8h |
| 85 | 1.4.4.14.8.9 | Конфиг ДОП СО |  | 1d | 2013-09-23 A | 2013-09-23 A |  | 100% |  |  |  |  | Глеб Ноздрачев [1%] | 0.08h | 0.08h |
| 86 | 1.4.4.14.8.10 | Maper СО |  | 2d | 2013-12-05 A | 2013-12-06 A | 77, 82 | 100% |  |  |  |  | Глеб Ноздрачев [80%] | 12.8h | 12.8h |
| 87 | 1.4.4.14.8.11 | Конфиг ДОП ВнД |  | 2d | 2013-09-27 A | 2013-10-01 A | 81 | 100% |  |  |  |  | Глеб Ноздрачев [80%] | 12.8h | 12.8h |

Notes:
- 56: DAO - язык запросов коллекций
- 57: Коллекции - сервис получения и получения счетчиков
- 58: Используя язык запросов коллеций
- 59: Для поддержания реализации избранного, отметок о прочтении и т.д.
- 67: Включая взаимодействие с Solr
- 70: Начальная реализация модуля "документооборот" - замена лотуса

| ID | WBS | Task | Type | Duration | Start | Finish | Predecessors | Complete | Remaining | Total slack | Free slack | Constraint | Resources | Work | Actual work |
| --- | --- | --- | --- | --- | --- | --- | --- | --- | --- | --- | --- | --- | --- | --- | --- |
| 88 | 1.4.4.14.8.12 | **Mapper ВнД** |  | 9d | 2014-01-27 A | 2014-02-06 | 77, 86 | 93% | 0.68d | 2d |  |  | Александр Власюк | 232h | 156.4h |
| 89 | 1.4.4.14.8.12.1 | Приступили к выполнению антикризисного плана | milestone | 0d | 2014-01-27 A | 2014-01-27 A |  | 100% |  |  |  | start no earlier than 2014-01-27 |  |  |  |
| 90 | 1.4.4.14.8.12.2 | Отладка Маппера Поручения |  | 1d | 2014-01-27 A | 2014-01-27 A | 89 | 100% |  |  |  |  | Александр Власюк | 8h | 8h |
| 91 | 1.4.4.14.8.12.3 | Отладка Маппера исполнения |  | 3d | 2014-01-27 A | 2014-01-29 A | 89 | 100% |  |  |  |  | Александр Власюк | 24h | 24h |
| 92 | 1.4.4.14.8.12.4 | Вспомогательная коллекция "responce" |  | 3d | 2014-01-27 A | 2014-01-29 A | 89 | 100% |  |  |  |  | (БТЛ) Михаил Ларин | 24h | 24h |
| 93 | 1.4.4.14.8.12.5 | Отладка мапперов |  | 4d | 2014-01-30 A | 2014-02-04 A | 90, 91 | 100% |  |  |  |  | Александр Власюк | 32h | 32h |
| 94 | 1.4.4.14.8.12.6 | UI - коллекции (7) |  | 4d | 2014-01-31 A | 2014-02-05 A | 92 | 100% |  |  |  | finish no earlier than 2014-02-05 | (БТЛ) Михаил Ларин | 32h | 32h |
| 95 | 1.4.4.14.8.12.7 | CollectionProvider методы получения только категорий |  | 5d | 2014-01-31 A | 2014-02-06 | 92 | 70% | 1.5d | 2d |  | finish no earlier than 2014-02-06 | (БТЛ) Олег Еренцов | 40h | 28h |
| 96 | 1.4.4.14.8.13 | **Доработка ВнД** |  | 16d | 2014-01-27 A | 2014-02-17 |  | 31% | 10.97d | 132d |  |  |  | 224h | 78h |
| 97 | 1.4.4.14.8.13.1 | Поддержка работы с Вложениями |  | 3d | 2014-02-04 A | 2014-02-06 A | 89 | 100% |  |  |  | finish no earlier than 2014-02-06 | Сергей Околот | 24h | 24h |
| 98 | 1.4.4.14.8.13.2 | Поддержка работы с ReachText |  | 1d | 2014-01-27 A | 2014-01-27 A | 89 | 100% |  |  |  |  | Тугушев Илья | 8h | 8h |
| 99 | 1.4.4.14.8.13.3 | Правила вычисления дправ доступа - реализация |  | 4d | 2014-02-03 A | 2014-02-06 A | 89, 92 | 100% |  |  |  | finish no earlier than 2014-02-06 | (БТЛ) Михаил Ларин | 32h | 32h |
| 100 | 1.4.4.14.8.13.4 | Поддержка полнотекстового поиска |  | 6d | 2014-02-07 | 2014-02-14 | 97 |  |  | 133d |  |  | Сергей Околот | 48h |  |
| 101 | 1.4.4.14.8.13.5 | Базовый сервис поддержки сценариев (+DOEL) |  | 7d | 2014-02-07 | 2014-02-17 | 98, 99 |  |  | 132d |  |  | (БТЛ) Михаил Ларин | 56h |  |
| 102 | 1.4.4.14.8.13.6 | **Перенос Логики работы агентов** |  | 10d | 2014-01-27 A | 2014-02-07 |  | 18% | 8.25d | 138d |  |  |  | 56h | 14h |
| 103 | 1.4.4.14.8.13.6.1 | Подбор варианта реализации |  | 7d | 2014-01-27 A | 2014-02-04 | 89 | 25% | 5.25d | 138d | 0d |  | Андрей Пирожков | 56h | 14h |
| 104 | 1.4.4.14.8.13.6.2 | Реализация и отладка переноса логики |  | 3d | 2014-02-05 | 2014-02-07 | 103 |  |  | 138d |  |  |  |  |  |
| 105 | 1.4.4.14.8.14 | Кофиг ДОП СпО |  | 1d | 2013-09-23 A | 2013-09-23 A |  | 100% |  |  |  |  | Глеб Ноздрачев [1%] | 0.08h | 0.08h |
| 106 | 1.4.4.14.8.15 | Mapper СпО |  | 3d | 2013-11-04 A | 2013-11-06 A | 77, 84 | 100% |  |  |  |  | Тугушев Илья [80%] | 19.2h | 19.2h |
| 107 | 1.4.4.14.8.16 | Аутентификация |  | 5d | 2014-02-04 A | 2014-02-10 A | 110 | 100% |  |  |  | start no earlier than 2014-02-04 | Андрей Карандей | 40h | 40h |
| 108 | 1.4.4.14.8.17 | **Настраиваемые коллекции** |  | 83.25d? | 2013-10-01 A | 2014-02-06 A | 81, 87 | 100% |  |  |  |  |  | 318.4h | 318.4h |
| 109 | 1.4.4.14.8.17.1 | **Системные настройки** |  | 42.25d | 2013-10-01 A | 2013-11-28 A |  | 100% |  |  |  |  |  | 232h | 232h |
| 110 | 1.4.4.14.8.17.1.1 | Builder коллекций |  | 20d | 2013-10-01 A | 2013-10-29 A |  | 100% |  |  |  | start no earlier than 2013-09-30 | Влад Симоненко | 160h | 160h |
| 111 | 1.4.4.14.8.17.1.2 | XSD-схема XML-настроек |  | 3d | 2013-10-29 A | 2013-11-01 A | 110 | 100% |  |  |  |  | Влад Симоненко | 24h | 24h |
| 112 | 1.4.4.14.8.17.1.3 | Чтение XML настроек через спец-Mapper |  | 3d | 2013-11-01 A | 2013-11-06 A | 111 | 100% |  |  |  |  | Влад Симоненко | 24h | 24h |
| 113 | 1.4.4.14.8.17.1.4 | Mapper папок |  | 3d | 2013-11-26 A | 2013-11-28 A |  | 100% |  |  |  | start no earlier than 2013-11-26 | Андрей Карандей | 24h | 24h |

Notes:
- 95: Реализовать в CollectionProvider методы получения только категорий (searchCategory(…)). Фильтрация для получения категорий должна производиться на уровне SQL / CMFIVE-416
- 101: Поддержка вычисления выражений и работы с доменными объектами
- 102: ТО, что выполнялось на лотусе ....
- 107: Кто первый освободится Власюк или Симоненко
- 110: Получение коллекций платформы в соотв. с конфигурацией [MMM] (знать коллекции платформы)
- 111: XSD-схема XML-настроек [NNN] 3дн (знать XML, XSD)
- 112: Чтение через спец-Mapper [NNN] 3дн (уметь работать с XML-парсером)

| ID | WBS | Task | Type | Duration | Start | Finish | Predecessors | Complete | Remaining | Total slack | Constraint | Resources | Work | Actual work |
| --- | --- | --- | --- | --- | --- | --- | --- | --- | --- | --- | --- | --- | --- | --- |
| 114 | 1.4.4.14.8.17.2 | **Конфигурация коллекций (логин)** |  | 10d | 2013-11-29 A | 2013-12-12 A | 87 | 100% |  |  |  |  | 80h | 80h |
| 115 | 1.4.4.14.8.17.2.1 | Типовая иерархия кастомных папок (3шт) |  | 5d | 2013-11-29 A | 2013-12-05 A | 113 | 100% |  |  |  | Андрей Карандей | 40h | 40h |
| 116 | 1.4.4.14.8.17.2.2 | Системные настройки для ВнД |  | 5d | 2013-12-06 A | 2013-12-12 A | 115 | 100% |  |  |  | (БТЛ) Олег Еренцов | 40h | 40h |
| 117 | 1.4.4.14.8.17.3 | Проверка работы |  | 1d? | 2013-12-13 A | 2013-12-13 A | 114, 109 | 100% |  |  |  | Глеб Ноздрачев [80%] | 6.4h | 6.4h |
| 118 | 1.4.4.14.8.17.4 | Конфигурация корневой папки навигатора | milestone | 0d | 2014-02-06 A | 2014-02-06 A |  | 100% |  |  | start no earlier than 2014-02-06 | Глеб Ноздрачев |  |  |
| 119 | 1.4.4.14.8.18 | **Разработка адаптеров для Вн** |  | 21d | 2013-09-30 A | 2013-10-28 A |  | 100% |  |  |  |  | 608h | 608h |
| 120 | 1.4.4.14.8.18.1 | Задание по View и Session поставлена | milestone | 0d | 2013-09-30 A | 2013-09-30 A |  | 100% |  |  | start no earlier than 2013-09-30 | Тугушев Илья [80%] |  |  |
| 121 | 1.4.4.14.8.18.2 | Адаптеры View, Session проектирование |  | 11d | 2013-09-30 A | 2013-10-14 A | 120 | 100% |  |  |  | (БТЛ) Олег Еренцов; (БТЛ)Сергей Степыгин | 176h | 176h |
| 122 | 1.4.4.14.8.18.3 | Разработка логики адаптеров view&session |  | 10d | 2013-10-15 A | 2013-10-28 A | 121 | 100% |  |  |  | (БТЛ) Олег Еренцов; (БТЛ)Сергей Степыгин | 160h | 160h |
| 123 | 1.4.4.14.8.18.4 | Разработка архитектуры дя адаптеров database |  | 5d | 2013-09-30 A | 2013-10-04 A | 120 | 100% |  |  |  | Тугушев Илья [80%] | 32h | 32h |
| 124 | 1.4.4.14.8.18.5 | Разработка адаптеров database |  | 15d | 2013-10-07 A | 2013-10-25 A | 123 | 100% |  |  |  | Александр Власюк | 120h | 120h |
| 125 | 1.4.4.14.8.18.6 | Задание по Database и Document поставлена | milestone | 0d | 2013-10-04 A | 2013-10-04 A | 120FS+5d | 100% |  |  |  | Тугушев Илья [80%] |  |  |
| 126 | 1.4.4.14.8.18.7 | Разработка адаптеров DOCUMENT |  | 15d | 2013-10-07 A | 2013-10-25 A | 123 | 100% |  |  |  | Александр Власюк | 120h | 120h |
| 127 | 1.4.4.14.8.19 | **Разработка коллекций (инициализация)** |  | 56d | 2013-10-29 A | 2014-01-24 | 122 | 99% | 0.28d | 148d |  |  | 472h | 469.6h |
| 128 | 1.4.4.14.8.19.1 | Описание полей документов Вн |  | 2d | 2013-10-29 A | 2013-10-30 A |  | 100% |  |  | finish no earlier than 2013-10-28 | Евгений Баланенко | 16h | 16h |
| 129 | 1.4.4.14.8.19.2 | Коллекции Портала |  | 5d | 2013-10-29 A | 2013-11-04 A | 83 | 100% |  |  |  | Евгений Баланенко | 40h | 40h |
| 130 | 1.4.4.14.8.19.3 | Инструктаж по @-формулам проведен | milestone | 0d | 2013-11-04 A | 2013-11-04 A | 129, 121 | 100% |  |  |  | Тугушев Илья [80%] |  |  |
| 131 | 1.4.4.14.8.19.4 | Коллекции СС |  | 5d | 2013-11-05 A | 2013-11-11 A | 129, 128 | 100% |  |  |  | (БТЛ) Олег Еренцов | 40h | 40h |
| 132 | 1.4.4.14.8.19.5 | Коллекции Каталога |  | 5d | 2013-11-05 A | 2013-11-11 A | 129, 81 | 100% |  |  |  | (БТЛ) Дмитрий Лякин | 40h | 40h |
| 133 | 1.4.4.14.8.19.6 | Коллекции СО |  | 5d | 2013-11-05 A | 2013-11-11 A | 129, 85 | 100% |  |  |  | Тугушев Илья [80%] | 32h | 32h |
| 134 | 1.4.4.14.8.19.7 | Коллекции СпО |  | 6d | 2013-11-12 A | 2013-11-19 A | 132 | 100% |  |  |  | (БТЛ) Дмитрий Лякин | 48h | 48h |
| 135 | 1.4.4.14.8.19.8 | **Разработка коллекций (логин)** |  | 16d | 2013-12-24 A | 2014-01-24 |  | 99% | 0.15d | 148d |  |  | 256h | 253.6h |
| 136 | 1.4.4.14.8.19.8.1 | Инициализация прошла | milestone | 0d | 2013-12-24 A | 2013-12-24 A |  | 100% |  |  | start no earlier than 2013-12-24 |  |  |  |
| 137 | 1.4.4.14.8.19.8.2 | Определение состава коллекций после инициализации Вн |  | 1d | 2013-12-24 A | 2013-12-24 A | 136 | 100% |  |  | finish no earlier than 2013-10-28 | Тугушев Илья | 8h | 8h |
| 138 | 1.4.4.14.8.19.8.3 | Коллекции Портала |  | 5d | 2013-12-24 A | 2014-01-09 A | 136 | 100% |  |  |  | Евгений Баланенко | 40h | 40h |
| 139 | 1.4.4.14.8.19.8.4 | Коллекции СС |  | 5d | 2014-01-10 A | 2014-01-16 A | 137, 138 | 100% |  |  |  | (БТЛ) Олег Еренцов | 40h | 40h |
| 140 | 1.4.4.14.8.19.8.5 | Коллекции Каталога |  | 5d | 2014-01-10 A | 2014-01-16 A | 138 | 100% |  |  |  | (БТЛ) Дмитрий Лякин | 40h | 40h |
| 141 | 1.4.4.14.8.19.8.6 | Коллекции СО |  | 5d | 2014-01-10 A | 2014-01-16 A | 138 | 100% |  |  |  | Тугушев Илья [80%] | 32h | 32h |
| 142 | 1.4.4.14.8.19.8.7 | Коллекции СпО |  | 6d | 2014-01-17 A | 2014-01-24 A | 140 | 100% |  |  |  | (БТЛ) Дмитрий Лякин | 48h | 48h |
| 143 | 1.4.4.14.8.19.8.8 | Коллекции ВнД |  | 6d | 2014-01-17 A | 2014-01-24 | 139 | 95% | 0.3d | 148d |  | (БТЛ) Олег Еренцов | 48h | 45.6h |
| 144 | 1.4.4.14.8.20 | ВнД | milestone | 0d | 2014-02-10 | 2014-02-10 | 131, 80, 132, 82, 129, 84, 133, 86, 88, 134, 106, 107, 108, 121 |  |  | 0d |  |  |  |  |

Notes:
- 116: Системные настройки для ВнД (1дескр + 10типов) [NNN] 1 дн
- 117: Х тестовых РКК ВнД [YYY] 2ч
- 128: - документ, описывающий соответствие нотес-полей полям ДОП для модуля ВнД
- 137: - документ, описывающий соответствие нотес-полей полям ДОП для модуля ВнД

| ID | WBS | Task | Type | Duration | Start | Finish | Predecessors | Complete | Remaining | Total slack | Free slack | Constraint | Resources | Work | Actual work |
| --- | --- | --- | --- | --- | --- | --- | --- | --- | --- | --- | --- | --- | --- | --- | --- |
| 145 | 1.4.4.14.8.21 | **Преобразование структуры зранения для Поруч и Исп.** |  | 5d | 2014-02-12 | 2014-02-18 |  |  |  | 131d |  |  |  |  |  |
| 146 | 1.4.4.14.8.21.1 | Принято решение по упрощению ДОП | milestone | 0d | 2014-02-12 | 2014-02-12 |  |  |  | 131d | 0d | start no earlier than 2014-02-12 |  |  |  |
| 147 | 1.4.4.14.8.21.2 | Адаптация ДОП |  | 2d | 2014-02-12 | 2014-02-13 | 146 |  |  | 131d | 0d |  |  |  |  |
| 148 | 1.4.4.14.8.21.3 | Адаптация коллекций |  | 3d | 2014-02-14 | 2014-02-18 | 147 |  |  | 131d |  |  |  |  |  |
| 149 | 1.4.4.14.8.22 | **Адаптация CMJ-server** |  | 2d | 2014-02-11 A | 2014-02-12 | 144 | 50% | 1d | 135d |  |  |  | 32h | 16h |
| 150 | 1.4.4.14.8.22.1 | Подмена РБД для CMJ-Server |  | 2d | 2014-02-11 A | 2014-02-12 A |  | 100% |  |  |  |  | Андрей Карандей | 16h | 16h |
| 151 | 1.4.4.14.8.22.2 | Имплементация аналогов @-функций для Sochi-server |  | 2d | 2014-02-11 | 2014-02-12 |  |  |  | 42d |  |  | (БТЛ) Михаил Ларин | 16h |  |
| 152 | 1.4.4.14.8.23 | Объединение War |  | 1d | 2014-02-11 A | 2014-02-11 A | 144 | 100% |  |  |  |  | Тугушев Илья | 8h | 8h |
| 153 | 1.4.4.14.8.24 | **Инструмент заполнения** |  | 4d? | 2014-02-11 A | 2014-02-14 | 144 | 18% | 3.27d? | 133d |  |  |  | 174.4h | 30.4h |
| 154 | 1.4.4.14.8.24.1 | **Заливка данных для демонстрации** |  | 4d | 2014-02-11 A | 2014-02-14 A |  | 100% |  |  |  |  |  | 30.4h | 30.4h |
| 155 | 1.4.4.14.8.24.1.1 | Подготовка задачи |  | 1d | 2014-02-11 A | 2014-02-11 A |  | 100% |  |  |  |  | Тугушев Илья [80%] | 6.4h | 6.4h |
| 156 | 1.4.4.14.8.24.1.2 | Написание скриптов заливки |  | 3d | 2014-02-12 A | 2014-02-14 A | 155 | 100% |  |  |  |  | Евгений Сафроненко | 24h | 24h |
| 157 | 1.4.4.14.8.24.2 | Инструмент заполнения Каталога |  | 3d? | 2014-02-11 | 2014-02-13 |  |  |  | 41d |  |  | Евгений Сафроненко | 24h |  |
| 158 | 1.4.4.14.8.24.3 | Инструмент заполнения СС |  | 3d? | 2014-02-11 | 2014-02-13 |  |  |  | 41d |  |  | Евгений Сафроненко | 24h |  |
| 159 | 1.4.4.14.8.24.4 | Инструмент заполнения Портала |  | 3d? | 2014-02-11 | 2014-02-13 |  |  |  | 41d |  |  | Евгений Сафроненко | 24h |  |
| 160 | 1.4.4.14.8.24.5 | Инструмент заполнения СО |  | 3d? | 2014-02-11 | 2014-02-13 |  |  |  | 41d |  |  | Евгений Сафроненко | 24h |  |
| 161 | 1.4.4.14.8.24.6 | Инструмент заполнения СпО |  | 3d? | 2014-02-11 | 2014-02-13 |  |  |  | 41d |  |  | Евгений Сафроненко | 24h |  |
| 162 | 1.4.4.14.8.24.7 | Проверка заполнения |  | 3d | 2014-02-11 | 2014-02-13 |  |  |  | 41d |  |  | Тимофей Щербатый | 24h |  |
| 163 | 1.4.4.14.9 | **Интеграция с CMJ по Входящим документам** |  | 26.8d | 2014-02-06 | 2014-03-14 |  |  |  | 37d |  |  |  | 478.4h |  |
| 164 | 1.4.4.14.9.1 | Задание выдано | milestone | 0d | 2014-02-06 | 2014-02-06 |  |  |  | 37d | 0d | start no earlier than 2014-02-06 | Тугушев Илья |  |  |
| 165 | 1.4.4.14.9.2 | Конфиг ДОП |  | 6d | 2014-02-06 | 2014-02-13 | 164 |  |  | 37d | 0d |  | Глеб Ноздрачев | 48h |  |
| 166 | 1.4.4.14.9.3 | Mapper |  | 4.8d | 2014-02-14 | 2014-02-20 | 165 |  |  | 52.2d | 0d |  | Александр Власюк | 38.4h |  |
| 167 | 1.4.4.14.9.4 | **Перенос логики сервисов по вхД** |  | 16d | 2014-02-20 | 2014-03-14 |  |  |  | 52.2d | 0d |  |  | 128h |  |
| 168 | 1.4.4.14.9.4.1 | Задача поставлена |  | 1d | 2014-02-20 | 2014-02-21 | 164, 166 |  |  | 52.2d | 0d |  | Тугушев Илья | 8h |  |
| 169 | 1.4.4.14.9.4.2 | Пролведение процедуры Revers Engineering для процессов |  | 10d | 2014-02-21 | 2014-03-07 | 168 |  |  | 52.2d | 0d |  | Наталья Смолянец (Смолянец) | 80h |  |
| 170 | 1.4.4.14.9.4.3 | Реализация в слое CMJ-CMSochi |  | 5d | 2014-03-07 | 2014-03-14 | 169 |  |  | 52.2d |  |  | Антон Ганчев (Киев) | 40h |  |

Notes:
- 169: Пролведение процедуры Revers Engineering и составлене алгоритма функционирования
- 170: Пнренос логики на java

| ID | WBS | Task | Type | Duration | Start | Finish | Predecessors | Complete | Remaining | Total slack | Free slack | Constraint | Resources | Work | Actual work |
| --- | --- | --- | --- | --- | --- | --- | --- | --- | --- | --- | --- | --- | --- | --- | --- |
| 171 | 1.4.4.14.9.5 | **Разработка коллекций** |  | 17d | 2014-02-14 | 2014-03-10 | 165 |  |  | 37d | 0d |  |  | 264h |  |
| 172 | 1.4.4.14.9.5.1 | Коллекции внутрисистемные |  | 9d | 2014-02-14 | 2014-02-26 | 165 |  |  | 125d | 8d |  | (БТЛ)Сергей Степыгин | 72h |  |
| 173 | 1.4.4.14.9.5.2 | Коллекции GUI |  | 10d | 2014-02-14 | 2014-02-27 | 165 |  |  | 37d | 0d |  | (БТЛ) Дмитрий Лякин | 80h |  |
| 174 | 1.4.4.14.9.5.3 | **Настраиваемые коллекции** |  | 7d | 2014-02-28 | 2014-03-10 | 173 |  |  | 37d | 0d |  |  | 112h |  |
| 175 | 1.4.4.14.9.5.3.1 | **Конфигурация коллекций** |  | 4d | 2014-02-28 | 2014-03-05 |  |  |  | 37d | 0d |  |  | 56h |  |
| 176 | 1.4.4.14.9.5.3.1.1 | Типовая иерархия кастомных папок (3шт) |  | 2d | 2014-02-28 | 2014-03-03 |  |  |  | 37d | 0d |  | (БТЛ) Олег Еренцов | 16h |  |
| 177 | 1.4.4.14.9.5.3.1.2 | Системные настройки для Вх |  | 2d | 2014-03-04 | 2014-03-05 | 176 |  |  | 37d |  |  | (БТЛ) Олег Еренцов | 16h |  |
| 178 | 1.4.4.14.9.5.3.1.3 | Проверка работы |  | 3d | 2014-02-28 | 2014-03-04 |  |  |  | 38d |  |  | (БТЛ) Олег Еренцов | 24h |  |
| 179 | 1.4.4.14.9.5.3.2 | Доработка расширенного поиска |  | 7d | 2014-02-28 | 2014-03-10 | 175SS |  |  | 117d |  |  | Сергей Околот | 56h |  |
| 180 | 1.4.4.14.9.6 | Интеграция по Вх выполнена | milestone | 0d | 2014-03-10 | 2014-03-10 | 166, 174, 172, 171 |  |  | 117d | 8d |  |  |  |  |
| 181 | 1.4.4.14.10 | **Подключение механизма контроля доступа** |  | 3d | 2014-03-20 | 2014-03-24 |  |  |  | 107d |  |  |  |  |  |
| 182 | 1.4.4.14.10.1 | Доступность Ноздрачева | milestone | 0d | 2014-03-20 | 2014-03-20 |  |  |  | 107d |  | start no earlier than 2014-03-20 |  |  |  |
| 183 | 1.4.4.14.10.2 | создание типовых матриц доступа |  | 3d | 2014-03-20 | 2014-03-24 | 182 |  |  | 107d |  |  |  |  |  |
| 184 | 1.4.4.14.11 | **Интеграция с CMJ по Договорам** |  | 21.8d | 2014-02-27 A | 2014-03-31 |  | 5% | 20.69d | 102.2d |  |  |  | 600h | 24h |
| 185 | 1.4.4.14.11.1 | Определен исполнитель по составлению конфигураций | milestone | 0d | 2014-02-27 | 2014-02-27 | 173 |  |  | 43d | 0d |  |  |  |  |
| 186 | 1.4.4.14.11.2 | Проектирование и получение оценки работ |  | 2d | 2014-02-28 | 2014-03-03 | 185 |  |  | 43d | 0d |  |  |  |  |
| 187 | 1.4.4.14.11.3 | Конфиг ДОП |  | 3d | 2014-03-04 | 2014-03-06 | 186 |  |  | 43d | 0d | start no earlier than 2014-02-27 | Александр Власюк | 24h |  |
| 188 | 1.4.4.14.11.4 | Mapper |  | 6d | 2014-03-07 A | 2014-03-14 | 187 | 50% | 3d | 106d | 0d |  | Александр Власюк | 48h | 24h |
| 189 | 1.4.4.14.11.5 | **Настраиваемые коллекции** |  | 7d | 2014-03-17 | 2014-03-25 | 188 |  |  | 106d | 0d |  |  | 144h |  |
| 190 | 1.4.4.14.11.5.1 | **Конфигурация коллекций** |  | 5d | 2014-03-17 | 2014-03-21 |  |  |  | 106d | 0d |  |  | 80h |  |
| 191 | 1.4.4.14.11.5.1.1 | Типовая иерархия кастомных папок (3шт) |  | 5d | 2014-03-17 | 2014-03-21 |  |  |  | 106d | 0d |  | Евгений Баланенко | 40h |  |
| 192 | 1.4.4.14.11.5.1.2 | Системные настройки для Дгв |  | 5d | 2014-03-17 | 2014-03-21 | 191SS |  |  | 107d |  |  | Евгений Баланенко | 40h |  |
| 193 | 1.4.4.14.11.5.2 | Проверка работы |  | 1d | 2014-03-24 | 2014-03-24 | 190 |  |  | 107d | 0d |  | Тимофей Билый | 8h |  |
| 194 | 1.4.4.14.11.5.3 | Доработка расширенного поиска |  | 7d | 2014-03-17 | 2014-03-25 | 191SS |  |  | 106d |  |  | Сергей Околот | 56h |  |
| 195 | 1.4.4.14.11.5.4 | Конфигурация для модуля "Договора" получена | milestone | 0d | 2014-03-24 | 2014-03-24 | 193 |  |  | 107d |  |  |  |  |  |

Notes:
- 177: Системные настройки для ВнД (1дескр + 10типов) [NNN] 1 дн
- 178: Х тестовых РКК ВнД [YYY] 2ч
- 192: Системные настройки для ВнД (1дескр + 10типов) [NNN] 1 дн
- 193: Х тестовых РКК ВнД [YYY] 2ч

| ID | WBS | Task | Type | Duration | Start | Finish | Predecessors | Total slack | Free slack | Constraint | Resources | Work |
| --- | --- | --- | --- | --- | --- | --- | --- | --- | --- | --- | --- | --- |
| 196 | 1.4.4.14.11.6 | **Перенос логики сервисов по Дгв** |  | 11d | 2014-03-14 | 2014-03-31 |  | 52.2d |  |  |  | 168h |
| 197 | 1.4.4.14.11.6.1 | Задача поставлена |  | 1d | 2014-03-14 | 2014-03-17 | 167 | 52.2d | 0d |  | Тугушев Илья | 8h |
| 198 | 1.4.4.14.11.6.2 | Пролведение процедуры Revers Engineering для процессов |  | 10d | 2014-03-17 | 2014-03-31 | 197, 187 | 52.2d | 0d |  | Наталья Смолянец (Смолянец) | 80h |
| 199 | 1.4.4.14.11.6.3 | Реализация в слое CMJ-CMSochi |  | 10d | 2014-03-17 | 2014-03-31 | 198SS | 52.2d | 0d |  | Антон Ганчев (Киев) | 80h |
| 200 | 1.4.4.14.11.7 | **Разработка коллекций** |  | 9d | 2014-03-06 | 2014-03-18 |  | 37d |  |  |  | 216h |
| 201 | 1.4.4.14.11.7.1 | Коллекции |  | 9d | 2014-03-06 | 2014-03-18 | 175 | 37d | 0d |  | (БТЛ) Олег Еренцов; (БТЛ) Дмитрий Лякин; (БТЛ)Сергей Степыгин | 216h |
| 202 | 1.4.4.14.11.8 | Интеграция по Дгв выполнена | milestone | 0d | 2014-03-25 | 2014-03-25 | 188, 189, 201 | 106d |  |  |  |  |
| 203 | 1.4.4.14.12 | **Интеграция с CMJ по Исходящие документам** |  | 23.8d | 2014-03-07 | 2014-04-09 | 144 | 43d |  |  |  | 516.8h |
| 204 | 1.4.4.14.12.1 | Конфиг ДОП |  | 3d | 2014-03-07 | 2014-03-11 | 187 | 43d | 0d |  | Александр Власюк | 24h |
| 205 | 1.4.4.14.12.2 | Mapper |  | 7d | 2014-03-12 | 2014-03-20 | 204 | 44d | 0d |  | Александр Власюк | 56h |
| 206 | 1.4.4.14.12.3 | **Настраиваемые коллекции** |  | 8d | 2014-03-12 | 2014-03-21 |  | 43d | 6d |  |  | 108.8h |
| 207 | 1.4.4.14.12.3.1 | **Конфигурация коллекций** |  | 6d | 2014-03-12 | 2014-03-19 |  | 43d | 0d |  |  | 96h |
| 208 | 1.4.4.14.12.3.1.1 | Типовая иерархия кастомных папок (3шт) |  | 6d | 2014-03-12 | 2014-03-19 | 204 | 43d | 0d |  | Евгений Сафроненко | 48h |
| 209 | 1.4.4.14.12.3.1.2 | Системные настройки для Исх |  | 6d | 2014-03-12 | 2014-03-19 | 208SS | 43d |  |  | Тимофей Билый | 48h |
| 210 | 1.4.4.14.12.3.2 | Проверка работы |  | 2d | 2014-03-20 | 2014-03-21 | 207 | 43d |  |  | Глеб Ноздрачев [80%] | 12.8h |
| 211 | 1.4.4.14.12.4 | **Перенос логики сервисов по Исх** |  | 7d | 2014-03-31 | 2014-04-09 | 205 | 52.2d | 0d |  |  | 112h |
| 212 | 1.4.4.14.12.4.1 | Задание поставлено | milestone | 0d | 2014-03-31 | 2014-03-31 | 199 | 52.2d | 0d | start no earlier than 2013-09-30 | Тугушев Илья [80%] |  |
| 213 | 1.4.4.14.12.4.2 | Пролведение процедуры Revers Engineering для процессов |  | 7d | 2014-03-31 | 2014-04-09 | 212 | 52.2d | 0d |  | Наталья Смолянец (Смолянец) | 56h |
| 214 | 1.4.4.14.12.4.3 | Реализация в слое CMJ-CMSochi |  | 7d | 2014-03-31 | 2014-04-09 | 213SS | 52.2d |  |  | Антон Ганчев (Киев) | 56h |
| 215 | 1.4.4.14.12.5 | **Разработка коллекций** |  | 9d | 2014-03-19 | 2014-03-31 |  | 37d |  |  |  | 216h |
| 216 | 1.4.4.14.12.5.1 | Коллекции |  | 9d | 2014-03-19 | 2014-03-31 | 201 | 37d | 0d |  | (БТЛ) Олег Еренцов; (БТЛ) Дмитрий Лякин; (БТЛ)Сергей Степыгин | 216h |
| 217 | 1.4.4.14.12.6 | Интеграция по Исх выполнена | milestone | 0d | 2014-03-31 | 2014-03-31 | 205, 206, 216 | 37d | 0d |  |  |  |
| 218 | 1.4.4.14.13 | Получена версия CM4.X c WF движком | milestone | 0d | 2014-03-21 | 2014-03-21 | 180, 220 | 109d |  | start no earlier than 2014-03-10 |  |  |
| 219 | 1.4.4.14.14 | **Переход на 4.3 CMJ** |  | 20d | 2014-03-14 | 2014-04-10 |  | 49d | 0d |  |  | 704h |
| 220 | 1.4.4.14.14.1 | Адаптация под функционал настраиваемых реквизитов |  | 5d | 2014-03-14 | 2014-03-21 | 221SF | 96d | 0d |  | Тугушев Илья; Глеб Ноздрачев; Java разработчик3; Тестировщик | 160h |
| 221 | 1.4.4.14.14.2 | Конфиг ДОП |  | 3d | 2014-03-21 | 2014-03-25 | 205 | 87d | 0d |  | Александр Власюк | 24h |
| 222 | 1.4.4.14.14.3 | Mapper |  | 5d | 2014-03-26 | 2014-04-01 | 221 | 91d |  |  | Александр Власюк | 40h |
| 223 | 1.4.4.14.14.4 | Коллекции |  | 8d | 2014-04-01 | 2014-04-10 | 217 | 37d | 0d |  | (БТЛ) Олег Еренцов; (БТЛ) Дмитрий Лякин; (БТЛ)Сергей Степыгин | 192h |
| 224 | 1.4.4.14.14.5 | Настройка адаптеров для 4.3 |  | 3d | 2014-03-21 | 2014-03-25 | 220 | 96d |  |  | Тугушев Илья; Глеб Ноздрачев; Java разработчик3; Тестировщик | 96h |
| 225 | 1.4.4.14.14.6 | Помещение сущностей во временный модуль |  | 12d | 2014-03-21 | 2014-04-07 | 221SS | 87d |  |  | Сергей Околот | 96h |
| 226 | 1.4.4.14.14.7 | Проверки сборки и функционала |  | 12d | 2014-03-21 | 2014-04-07 | 221SS | 87d |  |  | Java разработчик3 | 96h |

Notes:
- 198: Пролведение процедуры Revers Engineering и составлене алгоритма функционирования
- 199: Пнренос логики на java
- 209: Системные настройки для ВнД (1дескр + 10типов) [NNN] 1 дн
- 210: Х тестовых РКК ВнД [YYY] 2ч

| ID | WBS | Task | Type | Duration | Start | Finish | Predecessors | Total slack | Free slack | Constraint | Resources | Work |
| --- | --- | --- | --- | --- | --- | --- | --- | --- | --- | --- | --- | --- |
| 227 | 1.4.4.14.15 | **Интеграция с CMJ по ОРД** |  | 23d? | 2014-03-21 | 2014-04-22 |  | 46d |  |  |  | 526.4h |
| 228 | 1.4.4.14.15.1 | Конфиг ДОП |  | 3d | 2014-03-21 | 2014-03-25 | 205, 188SF | 46d | 0d |  | Александр Власюк | 24h |
| 229 | 1.4.4.14.15.2 | Mapper |  | 5d | 2014-03-26 | 2014-04-01 | 228 | 85d | 0d |  | Александр Власюк | 40h |
| 230 | 1.4.4.14.15.3 | **Настраиваемые коллекции** |  | 8d? | 2014-04-02 | 2014-04-11 | 229 | 87d | 7d |  |  | 158.4h |
| 231 | 1.4.4.14.15.3.1 | **Конфигурация коллекций** |  | 7d | 2014-04-02 | 2014-04-10 |  | 87d | 0d |  |  | 152h |
| 232 | 1.4.4.14.15.3.1.1 | Типовая иерархия кастомных папок (3шт) |  | 6d | 2014-04-02 | 2014-04-09 |  | 87d | 0d |  | Евгений Сафроненко | 48h |
| 233 | 1.4.4.14.15.3.1.2 | Системные настройки для ОРД |  | 6d | 2014-04-02 | 2014-04-09 | 232SS | 87d | 2d |  | Тимофей Билый | 48h |
| 234 | 1.4.4.14.15.3.1.3 | Доработка расширенного поиска |  | 7d | 2014-04-02 | 2014-04-10 | 232SS | 93d |  |  | Сергей Околот | 56h |
| 235 | 1.4.4.14.15.3.2 | Проверка работы |  | 1d? | 2014-04-11 | 2014-04-11 | 231 | 93d |  |  | Глеб Ноздрачев [80%] | 6.4h |
| 236 | 1.4.4.14.15.4 | **Перенос логики сервисов по ОРД** |  | 7d | 2014-04-09 | 2014-04-18 |  | 52.2d |  |  |  | 112h |
| 237 | 1.4.4.14.15.4.1 | Задание поставлено | milestone | 0d | 2014-04-09 | 2014-04-09 | 211 | 52.2d | 0d | start no earlier than 2013-09-30 | Тугушев Илья [80%] |  |
| 238 | 1.4.4.14.15.4.2 | Пролведение процедуры Revers Engineering для процессов |  | 7d | 2014-04-09 | 2014-04-18 | 237 | 52.2d | 0d |  | Наталья Смолянец (Смолянец) | 56h |
| 239 | 1.4.4.14.15.4.3 | Реализация в слое CMJ-CMSochi |  | 7d | 2014-04-09 | 2014-04-18 | 238SS | 81.2d | 0d |  | Антон Ганчев (Киев) | 56h |
| 240 | 1.4.4.14.15.5 | **Разработка коллекций** |  | 8d | 2014-04-11 | 2014-04-22 | 217 | 37d |  |  |  | 192h |
| 241 | 1.4.4.14.15.5.1 | Коллекции |  | 8d | 2014-04-11 | 2014-04-22 | 228, 223 | 37d | 0d |  | (БТЛ) Олег Еренцов; (БТЛ) Дмитрий Лякин; (БТЛ)Сергей Степыгин | 192h |
| 242 | 1.4.4.14.15.6 | Интеграция по ОРД выполнена | milestone | 0d | 2014-04-22 | 2014-04-22 | 229, 230, 241 | 86d |  |  |  |  |
| 243 | 1.4.4.14.16 | **Интеграция с CMJ по самостоятельным поручениям** |  | 23d? | 2014-04-02 | 2014-05-06 |  | 78d |  |  |  | 526.4h |
| 244 | 1.4.4.14.16.1 | Конфиг ДОП |  | 3d | 2014-04-02 | 2014-04-04 | 229 | 85d | 0d |  | Александр Власюк | 24h |
| 245 | 1.4.4.14.16.2 | Mapper |  | 5d | 2014-04-07 | 2014-04-11 | 244 | 85d | 0d |  | Александр Власюк | 40h |
| 246 | 1.4.4.14.16.3 | **Настраиваемые коллекции** |  | 8d? | 2014-04-14 | 2014-04-23 | 245 | 85d | 7d |  |  | 158.4h |
| 247 | 1.4.4.14.16.3.1 | **Конфигурация коллекций** |  | 7d | 2014-04-14 | 2014-04-22 | 233 | 85d | 0d |  |  | 152h |
| 248 | 1.4.4.14.16.3.1.1 | Типовая иерархия кастомных папок (3шт) |  | 6d | 2014-04-14 | 2014-04-21 |  | 85d | 0d |  | Евгений Сафроненко | 48h |
| 249 | 1.4.4.14.16.3.1.2 | Системные настройки для СамПор |  | 6d | 2014-04-14 | 2014-04-21 | 248SS | 86d |  |  | Тимофей Билый | 48h |
| 250 | 1.4.4.14.16.3.1.3 | Доработка расширенного поиска |  | 7d | 2014-04-14 | 2014-04-22 | 248SS | 85d |  |  | Сергей Околот | 56h |
| 251 | 1.4.4.14.16.3.2 | Проверка работы |  | 1d? | 2014-04-23 | 2014-04-23 | 247 | 85d |  |  | Глеб Ноздрачев [80%] | 6.4h |

Notes:
- 233: Системные настройки для ВнД (1дескр + 10типов) [NNN] 1 дн
- 235: Х тестовых РКК ВнД [YYY] 2ч
- 249: Системные настройки для ВнД (1дескр + 10типов) [NNN] 1 дн
- 251: Х тестовых РКК ВнД [YYY] 2ч

| ID | WBS | Task | Type | Duration | Start | Finish | Predecessors | Total slack | Free slack | Constraint | Resources | Work |
| --- | --- | --- | --- | --- | --- | --- | --- | --- | --- | --- | --- | --- |
| 252 | 1.4.4.14.16.4 | **Перенос логики сервисов по СамПор** |  | 7d | 2014-04-18 | 2014-04-29 |  | 81.2d |  |  |  | 112h |
| 253 | 1.4.4.14.16.4.1 | Задание поставлено | milestone | 0d | 2014-04-18 | 2014-04-18 | 239 | 81.2d | 0d | start no earlier than 2013-09-30 | Тугушев Илья [80%] |  |
| 254 | 1.4.4.14.16.4.2 | Пролведение процедуры Revers Engineering для процессов |  | 7d | 2014-04-18 | 2014-04-29 | 253 | 81.2d | 0d |  | Наталья Смолянец (Смолянец) | 56h |
| 255 | 1.4.4.14.16.4.3 | Реализация в слое CMJ-CMSochi |  | 7d | 2014-04-18 | 2014-04-29 | 254SS | 81.2d |  |  | Антон Ганчев (Киев) | 56h |
| 256 | 1.4.4.14.16.5 | **Разработка коллекций** |  | 8d | 2014-04-23 | 2014-05-06 |  | 78d |  |  |  | 192h |
| 257 | 1.4.4.14.16.5.1 | Коллекции |  | 8d | 2014-04-23 | 2014-05-06 | 244, 241 | 78d | 0d |  | (БТЛ) Олег Еренцов; (БТЛ) Дмитрий Лякин; (БТЛ)Сергей Степыгин | 192h |
| 258 | 1.4.4.14.16.6 | Интеграция по СамПор выполнена | milestone | 0d | 2014-05-06 | 2014-05-06 | 245, 246, 257 | 78d |  |  |  |  |
| 259 | 1.4.4.14.17 | **Интеграция с CMJ по ОГ** |  | 28d? | 2014-03-26 | 2014-05-06 |  | 46d |  |  |  | 526.4h |
| 260 | 1.4.4.14.17.1 | Конфиг ДОП |  | 3d | 2014-03-26 | 2014-03-28 | 228 | 46d | 0d |  | Александр Власюк | 24h |
| 261 | 1.4.4.14.17.2 | Mapper |  | 5d | 2014-03-31 | 2014-04-04 | 260 | 46d | 0d |  | Александр Власюк | 40h |
| 262 | 1.4.4.14.17.3 | **Настраиваемые коллекции** |  | 8d? | 2014-04-07 | 2014-04-16 | 261 | 52d | 12d |  |  | 158.4h |
| 263 | 1.4.4.14.17.3.1 | **Конфигурация коллекций** |  | 7d | 2014-04-07 | 2014-04-15 |  | 52d | 0d |  |  | 152h |
| 264 | 1.4.4.14.17.3.1.1 | Типовая иерархия кастомных папок (3шт) |  | 6d | 2014-04-07 | 2014-04-14 |  | 52d | 0d |  | Евгений Сафроненко | 48h |
| 265 | 1.4.4.14.17.3.1.2 | Системные настройки для ОГ |  | 6d | 2014-04-07 | 2014-04-14 | 264SS | 53d |  |  | Тимофей Билый | 48h |
| 266 | 1.4.4.14.17.3.1.3 | Доработка расширенного поиска |  | 7d | 2014-04-07 | 2014-04-15 | 264SS | 52d |  |  | Сергей Околот | 56h |
| 267 | 1.4.4.14.17.3.2 | Проверка работы |  | 1d? | 2014-04-16 | 2014-04-16 | 263 | 90d |  |  | Глеб Ноздрачев [80%] | 6.4h |
| 268 | 1.4.4.14.17.4 | **Перенос логики сервисов по ОГ** |  | 7d | 2014-04-18 | 2014-04-29 |  | 52.2d |  |  |  | 112h |
| 269 | 1.4.4.14.17.4.1 | Задание поставлено | milestone | 0d | 2014-04-18 | 2014-04-18 | 260, 238 | 52.2d | 0d | start no earlier than 2013-09-30 | Тугушев Илья [80%] |  |
| 270 | 1.4.4.14.17.4.2 | Пролведение процедуры Revers Engineering для процессов |  | 7d | 2014-04-18 | 2014-04-29 | 269 | 52.2d | 0d |  | Наталья Смолянец (Смолянец) | 56h |
| 271 | 1.4.4.14.17.4.3 | Реализация в слое CMJ-CMSochi |  | 7d | 2014-04-18 | 2014-04-29 | 270SS | 52.2d | 0d |  | Антон Ганчев (Киев) | 56h |
| 272 | 1.4.4.14.17.5 | **Разработка коллекций** |  | 8d | 2014-04-23 | 2014-05-06 |  | 37d | 0d |  |  | 192h |
| 273 | 1.4.4.14.17.5.1 | Коллекции |  | 8d | 2014-04-23 | 2014-05-06 | 260, 241 | 37d | 0d |  | (БТЛ) Олег Еренцов; (БТЛ) Дмитрий Лякин; (БТЛ)Сергей Степыгин | 192h |
| 274 | 1.4.4.14.17.6 | Интеграция по ОГ выполнена | milestone | 0d | 2014-05-06 | 2014-05-06 | 261, 262, 273 | 78d |  |  |  |  |
| 275 | 1.4.4.14.18 | **Интеграция с CMJ по WF** |  | 25d? | 2014-04-07 | 2014-05-14 |  | 46d |  |  |  | 398.4h |
| 276 | 1.4.4.14.18.1 | Конфиг ДОП |  | 1d | 2014-04-07 | 2014-04-07 | 261 | 46d | 0d |  | Александр Власюк | 8h |
| 277 | 1.4.4.14.18.2 | Mapper |  | 3d | 2014-04-08 | 2014-04-10 | 276 | 46d | 0d |  | Александр Власюк | 24h |

Notes:
- 265: Системные настройки для ВнД (1дескр + 10типов) [NNN] 1 дн
- 267: Х тестовых РКК ВнД [YYY] 2ч

| ID | WBS | Task | Type | Duration | Start | Finish | Predecessors | Total slack | Free slack | Constraint | Resources | Work |
| --- | --- | --- | --- | --- | --- | --- | --- | --- | --- | --- | --- | --- |
| 278 | 1.4.4.14.18.3 | **Настраиваемые коллекции** |  | 8d? | 2014-04-16 | 2014-04-25 | 277 | 52d | 10d |  |  | 126.4h |
| 279 | 1.4.4.14.18.3.1 | **Конфигурация коллекций** |  | 7d | 2014-04-16 | 2014-04-24 | 263 | 52d | 0d |  |  | 120h |
| 280 | 1.4.4.14.18.3.1.1 | Типовая иерархия кастомных папок (3шт) |  | 4d | 2014-04-16 | 2014-04-21 |  | 52d | 0d |  | Евгений Сафроненко | 32h |
| 281 | 1.4.4.14.18.3.1.2 | Системные настройки для WF |  | 4d | 2014-04-16 | 2014-04-21 | 280SS | 52d | 0d |  | Тимофей Билый | 32h |
| 282 | 1.4.4.14.18.3.1.3 | Доработка расширенного поиска |  | 7d | 2014-04-16 | 2014-04-24 | 280SS | 83d |  |  | Сергей Околот | 56h |
| 283 | 1.4.4.14.18.3.2 | Проверка работы |  | 1d? | 2014-04-25 | 2014-04-25 | 279 | 83d |  |  | Глеб Ноздрачев [80%] | 6.4h |
| 284 | 1.4.4.14.18.4 | **Перенос логики сервисов по WF** |  | 3d | 2014-04-29 | 2014-05-06 |  | 52.2d |  |  |  | 48h |
| 285 | 1.4.4.14.18.4.1 | Задание поставлено | milestone | 0d | 2014-04-29 | 2014-04-29 | 276, 271 | 52.2d | 0d | start no earlier than 2013-09-30 | Тугушев Илья [80%] |  |
| 286 | 1.4.4.14.18.4.2 | Пролведение процедуры Revers Engineering для процессов |  | 3d | 2014-04-29 | 2014-05-06 | 285 | 52.2d | 0d |  | Наталья Смолянец (Смолянец) | 24h |
| 287 | 1.4.4.14.18.4.3 | Реализация в слое CMJ-CMSochi |  | 3d | 2014-04-29 | 2014-05-06 | 286SS | 52.2d | 0d |  | Антон Ганчев (Киев) | 24h |
| 288 | 1.4.4.14.18.5 | **Разработка адаптеров для СрвСогл** |  | 10d | 2014-04-10 | 2014-04-24 |  | 84d |  |  |  | 72h |
| 289 | 1.4.4.14.18.5.1 | Задание поставлено | milestone | 0d | 2014-04-10 | 2014-04-10 | 276, 219 | 84d | 0d | start no earlier than 2013-09-30 | Тугушев Илья [80%] |  |
| 290 | 1.4.4.14.18.5.2 | Разработка архитектуры дя адаптеров |  | 5d | 2014-04-11 | 2014-04-17 | 289 | 84d | 0d |  | Тугушев Илья [80%] | 32h |
| 291 | 1.4.4.14.18.5.3 | Разработка адаптеров |  | 5d | 2014-04-18 | 2014-04-24 | 290 | 84d |  |  | Александр Власюк | 40h |
| 292 | 1.4.4.14.18.6 | **Разработка коллекций** |  | 5d | 2014-05-07 | 2014-05-14 |  | 37d |  |  |  | 120h |
| 293 | 1.4.4.14.18.6.1 | Коллекции |  | 5d | 2014-05-07 | 2014-05-14 | 276, 272 | 37d | 0d |  | (БТЛ) Олег Еренцов; (БТЛ) Дмитрий Лякин; (БТЛ)Сергей Степыгин | 120h |
| 294 | 1.4.4.14.18.7 | Интеграция по WF выполнена | milestone | 0d | 2014-05-14 | 2014-05-14 | 277, 278, 293 | 73d |  |  |  |  |
| 295 | 1.4.4.14.19 | **Интеграция с CMJ по сервису Контроля Заданий** |  | 28d? | 2014-04-11 | 2014-05-23 |  | 46d |  |  |  | 502.4h |
| 296 | 1.4.4.14.19.1 | Конфиг ДОП |  | 3d | 2014-04-11 | 2014-04-15 | 277 | 46d | 0d |  | Александр Власюк | 24h |
| 297 | 1.4.4.14.19.2 | Mapper |  | 5d | 2014-04-16 | 2014-04-22 | 296 | 46d | 0d |  | Александр Власюк | 40h |
| 298 | 1.4.4.14.19.3 | **Настраиваемые коллекции** |  | 10d? | 2014-04-29 | 2014-05-16 | 297 | 48.2d | 5.2d |  |  | 158.4h |
| 299 | 1.4.4.14.19.3.1 | **Конфигурация коллекций** |  | 9d | 2014-04-29 | 2014-05-15 |  | 55.2d | 0d |  |  | 152h |
| 300 | 1.4.4.14.19.3.1.1 | Типовая иерархия кастомных папок |  | 6d | 2014-05-06 | 2014-05-15 | 287 | 52.2d | 0d |  | Евгений Сафроненко | 48h |
| 301 | 1.4.4.14.19.3.1.2 | Доработка расширенного поиска |  | 7d | 2014-04-29 | 2014-05-13 | 287SS | 73.2d |  |  | Сергей Околот | 56h |
| 302 | 1.4.4.14.19.3.1.3 | Системные настройки для КЗ |  | 6d | 2014-05-06 | 2014-05-15 | 300SS | 52.2d | 0d |  | Тимофей Билый | 48h |
| 303 | 1.4.4.14.19.3.2 | Проверка работы |  | 1d? | 2014-05-15 | 2014-05-16 | 299 | 71.2d |  |  | Глеб Ноздрачев [80%] | 6.4h |

Notes:
- 281: Системные настройки для ВнД (1дескр + 10типов) [NNN] 1 дн
- 283: Х тестовых РКК ВнД [YYY] 2ч
- 302: Системные настройки для ВнД (1дескр + 10типов) [NNN] 1 дн
- 303: Х тестовых РКК ВнД [YYY] 2ч

| ID | WBS | Task | Type | Duration | Start | Finish | Predecessors | Total slack | Free slack | Constraint | Resources | Work |
| --- | --- | --- | --- | --- | --- | --- | --- | --- | --- | --- | --- | --- |
| 304 | 1.4.4.14.19.4 | **Перенос логики сервисов по КЗ** |  | 11d | 2014-04-15 | 2014-04-30 |  | 56d |  |  |  | 112h |
| 305 | 1.4.4.14.19.4.1 | Задание поставлено | milestone | 0d | 2014-04-15 | 2014-04-15 | 296 | 56d | 4d | start no earlier than 2013-09-30 | Тугушев Илья [80%] |  |
| 306 | 1.4.4.14.19.4.2 | Пролведение процедуры Revers Engineering для процессов |  | 7d | 2014-04-22 | 2014-04-30 | 305, 281 | 52d | 0d |  | Наталья Смолянец (Смолянец) | 56h |
| 307 | 1.4.4.14.19.4.3 | Реализация в слое CMJ-CMSochi |  | 7d | 2014-04-22 | 2014-04-30 | 306SS | 80d |  |  | Антон Ганчев (Киев) | 56h |
| 308 | 1.4.4.14.19.5 | **Разработка коллекций** |  | 7d | 2014-05-15 | 2014-05-23 |  | 37d |  |  |  | 168h |
| 309 | 1.4.4.14.19.5.1 | Коллекции |  | 7d | 2014-05-15 | 2014-05-23 | 296, 293 | 37d | 0d |  | (БТЛ) Олег Еренцов; (БТЛ) Дмитрий Лякин; (БТЛ)Сергей Степыгин | 168h |
| 310 | 1.4.4.14.19.6 | Интеграция по КЗ выполнена | milestone | 0d | 2014-05-23 | 2014-05-23 | 297, 298, 309 | 66d |  |  |  |  |
| 311 | 1.4.4.14.20 | **Интеграция с CMJ по Формированию дел** |  | 26d? | 2014-04-23 | 2014-06-02 |  | 46d |  |  |  | 478.4h |
| 312 | 1.4.4.14.20.1 | Конфиг ДОП |  | 3d | 2014-04-23 | 2014-04-25 | 297 | 46d | 0d |  | Александр Власюк | 24h |
| 313 | 1.4.4.14.20.2 | Mapper |  | 5d | 2014-04-28 | 2014-05-06 | 312 | 46d | 0d |  | Александр Власюк | 40h |
| 314 | 1.4.4.14.20.3 | **Настраиваемые коллекции** |  | 8d? | 2014-05-15 | 2014-05-27 | 313 | 45.2d | 4.2d |  |  | 158.4h |
| 315 | 1.4.4.14.20.3.1 | **Конфигурация коллекций** |  | 7d | 2014-05-15 | 2014-05-26 |  | 52.2d | 0d |  |  | 152h |
| 316 | 1.4.4.14.20.3.1.1 | Типовая иерархия кастомных папок |  | 6d | 2014-05-15 | 2014-05-23 | 302 | 52.2d | 0d |  | Евгений Сафроненко | 48h |
| 317 | 1.4.4.14.20.3.1.2 | Доработка расширенного поиска |  | 7d | 2014-05-15 | 2014-05-26 | 316SS | 64.2d |  |  | Сергей Околот | 56h |
| 318 | 1.4.4.14.20.3.1.3 | Системные настройки для ФД |  | 6d | 2014-05-15 | 2014-05-23 | 316SS | 52.2d | 0d |  | Тимофей Билый | 48h |
| 319 | 1.4.4.14.20.3.2 | Проверка работы |  | 1d? | 2014-05-26 | 2014-05-27 | 315 | 64.2d |  |  | Глеб Ноздрачев [80%] | 6.4h |
| 320 | 1.4.4.14.20.4 | **Перенос логики сервисов по ФД** |  | 10d | 2014-04-25 | 2014-05-14 |  | 52d |  |  |  | 112h |
| 321 | 1.4.4.14.20.4.1 | Задание поставлено | milestone | 0d | 2014-04-25 | 2014-04-25 | 312 | 55d | 3d | start no earlier than 2013-09-30 | Тугушев Илья [80%] |  |
| 322 | 1.4.4.14.20.4.2 | Пролведение процедуры Revers Engineering для процессов |  | 7d | 2014-05-05 | 2014-05-14 | 321, 306 | 52d | 0d |  | Наталья Смолянец (Смолянец) | 56h |
| 323 | 1.4.4.14.20.4.3 | Реализация в слое CMJ-CMSochi |  | 7d | 2014-05-05 | 2014-05-14 | 322SS | 52d | 0d |  | Антон Ганчев (Киев) | 56h |
| 324 | 1.4.4.14.20.5 | **Разработка коллекций** |  | 6d | 2014-05-26 | 2014-06-02 |  | 37d |  |  |  | 144h |
| 325 | 1.4.4.14.20.5.1 | Коллекции |  | 6d | 2014-05-26 | 2014-06-02 | 312, 309 | 37d | 0d |  | (БТЛ) Олег Еренцов; (БТЛ) Дмитрий Лякин; (БТЛ)Сергей Степыгин | 144h |
| 326 | 1.4.4.14.20.6 | Интеграция по ФД выполнена | milestone | 0d | 2014-06-02 | 2014-06-02 | 313, 314, 325 | 60d |  |  |  |  |
| 327 | 1.4.4.14.21 | **Интеграция с CMJ по Заседаниям** |  | 24d? | 2014-05-07 | 2014-06-10 |  | 46d |  |  |  | 478.4h |
| 328 | 1.4.4.14.21.1 | Конфиг ДОП |  | 3d | 2014-05-07 | 2014-05-12 | 313 | 46d | 0d |  | Александр Власюк | 24h |
| 329 | 1.4.4.14.21.2 | Mapper |  | 5d | 2014-05-13 | 2014-05-19 | 328 | 46d | 0d |  | Александр Власюк | 40h |

Notes:
- 318: Системные настройки для ВнД (1дескр + 10типов) [NNN] 1 дн
- 319: Х тестовых РКК ВнД [YYY] 2ч

| ID | WBS | Task | Type | Duration | Start | Finish | Predecessors | Total slack | Free slack | Constraint | Resources | Work |
| --- | --- | --- | --- | --- | --- | --- | --- | --- | --- | --- | --- | --- |
| 330 | 1.4.4.14.21.3 | **Настраиваемые коллекции** |  | 8d? | 2014-05-23 | 2014-06-04 | 329 | 45.2d | 4.2d |  |  | 158.4h |
| 331 | 1.4.4.14.21.3.1 | **Конфигурация коллекций** |  | 7d | 2014-05-23 | 2014-06-03 |  | 45.2d | 0d |  |  | 152h |
| 332 | 1.4.4.14.21.3.1.1 | Типовая иерархия кастомных папок |  | 6d | 2014-05-23 | 2014-06-02 | 318 | 45.2d | 0d |  | Евгений Сафроненко | 48h |
| 333 | 1.4.4.14.21.3.1.2 | Системные настройки для Зсд |  | 6d | 2014-05-23 | 2014-06-02 | 332SS | 45.2d | 0d |  | Тимофей Билый | 48h |
| 334 | 1.4.4.14.21.3.1.3 | Доработка расширенного поиска |  | 7d | 2014-05-23 | 2014-06-03 | 332SS | 58.2d |  |  | Сергей Околот | 56h |
| 335 | 1.4.4.14.21.3.2 | Проверка работы |  | 1d? | 2014-06-03 | 2014-06-04 | 331 | 58.2d |  |  | Глеб Ноздрачев [80%] | 6.4h |
| 336 | 1.4.4.14.21.4 | **Перенос логики сервисов по Зсд** |  | 7d | 2014-05-14 | 2014-05-23 |  | 52d |  |  |  | 112h |
| 337 | 1.4.4.14.21.4.1 | Задание поставлено | milestone | 0d | 2014-05-14 | 2014-05-14 | 328, 322 | 52d | 0d | start no earlier than 2013-09-30 | Тугушев Илья [80%] |  |
| 338 | 1.4.4.14.21.4.2 | Пролведение процедуры Revers Engineering для процессов |  | 7d | 2014-05-15 | 2014-05-23 | 337, 323 | 52d | 0d |  | Наталья Смолянец (Смолянец) | 56h |
| 339 | 1.4.4.14.21.4.3 | Реализация в слое CMJ-CMSochi |  | 7d | 2014-05-15 | 2014-05-23 | 338SS | 66d |  |  | Антон Ганчев (Киев) | 56h |
| 340 | 1.4.4.14.21.5 | **Разработка коллекций** |  | 6d | 2014-06-03 | 2014-06-10 |  | 37d |  |  |  | 144h |
| 341 | 1.4.4.14.21.5.1 | Коллекции |  | 6d | 2014-06-03 | 2014-06-10 | 328, 325 | 37d | 0d |  | (БТЛ) Олег Еренцов; (БТЛ) Дмитрий Лякин; (БТЛ)Сергей Степыгин | 144h |
| 342 | 1.4.4.14.21.6 | Интеграция по Зсд выполнена | milestone | 0d | 2014-06-10 | 2014-06-10 | 329, 330, 341 | 54d |  |  |  |  |
| 343 | 1.4.4.14.22 | **Интеграция с CMJ по Обсуждениям и ознакомлениям** |  | 23d? | 2014-05-20 | 2014-06-19 |  | 46d |  |  |  | 502.4h |
| 344 | 1.4.4.14.22.1 | Конфиг ДОП |  | 3d | 2014-05-20 | 2014-05-22 | 329 | 46d | 0d |  | Александр Власюк | 24h |
| 345 | 1.4.4.14.22.2 | Mapper |  | 5d | 2014-05-23 | 2014-05-29 | 344 | 46d | 0d |  | Александр Власюк | 40h |
| 346 | 1.4.4.14.22.3 | **Настраиваемые коллекции** |  | 8d? | 2014-06-02 | 2014-06-12 | 345 | 45.2d | 5.2d |  |  | 158.4h |
| 347 | 1.4.4.14.22.3.1 | **Конфигурация коллекций** |  | 7d | 2014-06-02 | 2014-06-11 |  | 45.2d | 0d |  |  | 152h |
| 348 | 1.4.4.14.22.3.1.1 | Типовая иерархия кастомных папок |  | 6d | 2014-06-02 | 2014-06-10 | 333 | 45.2d | 0d |  | Евгений Сафроненко | 48h |
| 349 | 1.4.4.14.22.3.1.2 | Доработка расширенного поиска |  | 7d | 2014-06-02 | 2014-06-11 | 348SS | 45.2d |  |  | Сергей Околот | 56h |
| 350 | 1.4.4.14.22.3.1.3 | Системные настройки для ОО |  | 6d | 2014-06-02 | 2014-06-10 | 348SS | 53.2d |  |  | Тимофей Билый | 48h |
| 351 | 1.4.4.14.22.3.2 | Проверка работы |  | 1d? | 2014-06-11 | 2014-06-12 | 347 | 52.2d |  |  | Глеб Ноздрачев [80%] | 6.4h |
| 352 | 1.4.4.14.22.4 | **Перенос логики сервисов по ОО** |  | 8d | 2014-05-22 | 2014-06-03 |  | 52d |  |  |  | 112h |
| 353 | 1.4.4.14.22.4.1 | Задание поставлено | milestone | 0d | 2014-05-22 | 2014-05-22 | 344 | 53d | 1d | start no earlier than 2013-09-30 | Тугушев Илья [80%] |  |
| 354 | 1.4.4.14.22.4.2 | Пролведение процедуры Revers Engineering для процессов |  | 7d | 2014-05-26 | 2014-06-03 | 353, 338 | 52d | 0d |  | Наталья Смолянец (Смолянец) | 56h |
| 355 | 1.4.4.14.22.4.3 | Реализация в слое CMJ-CMSochi |  | 7d | 2014-05-26 | 2014-06-03 | 354SS | 52d | 0d |  | Антон Ганчев (Киев) | 56h |

Notes:
- 333: Системные настройки для ВнД (1дескр + 10типов) [NNN] 1 дн
- 335: Х тестовых РКК ВнД [YYY] 2ч
- 350: Системные настройки для ВнД (1дескр + 10типов) [NNN] 1 дн
- 351: Х тестовых РКК ВнД [YYY] 2ч

| ID | WBS | Task | Type | Duration | Start | Finish | Predecessors | Total slack | Free slack | Constraint | Resources | Work |
| --- | --- | --- | --- | --- | --- | --- | --- | --- | --- | --- | --- | --- |
| 356 | 1.4.4.14.22.5 | **Разработка коллекций** |  | 7d | 2014-06-11 | 2014-06-19 |  | 37d |  |  |  | 168h |
| 357 | 1.4.4.14.22.5.1 | Коллекции |  | 7d | 2014-06-11 | 2014-06-19 | 344, 341 | 37d | 0d |  | (БТЛ) Олег Еренцов; (БТЛ) Дмитрий Лякин; (БТЛ)Сергей Степыгин | 168h |
| 358 | 1.4.4.14.22.6 | Интеграция по ОО выполнена | milestone | 0d | 2014-06-19 | 2014-06-19 | 345, 346, 357 | 47d |  |  |  |  |
| 359 | 1.4.4.14.23 | **Интеграция с CMJ настраиваемым коллециям** |  | 22d? | 2014-05-30 | 2014-06-30 |  | 40d |  |  |  | 502.4h |
| 360 | 1.4.4.14.23.1 | Конфиг ДОП |  | 3d | 2014-05-30 | 2014-06-03 | 345 | 46d | 0d |  | Александр Власюк | 24h |
| 361 | 1.4.4.14.23.2 | Mapper |  | 5d | 2014-06-04 | 2014-06-10 | 360 | 46d | 0d |  | Александр Власюк | 40h |
| 362 | 1.4.4.14.23.3 | **Настраиваемые коллекции** |  | 8d? | 2014-06-11 | 2014-06-23 | 361 | 45.2d | 5.2d |  |  | 158.4h |
| 363 | 1.4.4.14.23.3.1 | **Конфигурация коллекций** |  | 7d | 2014-06-11 | 2014-06-20 | 349 | 45.2d | 0d |  |  | 152h |
| 364 | 1.4.4.14.23.3.1.1 | Типовая иерархия кастомных папок |  | 6d | 2014-06-11 | 2014-06-19 |  | 45.2d | 0d |  | Евгений Сафроненко | 48h |
| 365 | 1.4.4.14.23.3.1.2 | Доработка расширенного поиска |  | 7d | 2014-06-11 | 2014-06-20 | 364SS | 45.2d |  |  | Сергей Околот | 56h |
| 366 | 1.4.4.14.23.3.1.3 | Системные настройки для ОО |  | 6d | 2014-06-11 | 2014-06-19 | 364SS | 46.2d |  |  | Тимофей Билый | 48h |
| 367 | 1.4.4.14.23.3.2 | Проверка работы |  | 1d? | 2014-06-20 | 2014-06-23 | 363 | 45.2d |  |  | Глеб Ноздрачев [80%] | 6.4h |
| 368 | 1.4.4.14.23.4 | **Перенос логики сервисов по ОО** |  | 7d | 2014-06-03 | 2014-06-12 |  | 52d |  |  |  | 112h |
| 369 | 1.4.4.14.23.4.1 | Задание поставлено | milestone | 0d | 2014-06-03 | 2014-06-03 | 360, 355 | 52d | 0d | start no earlier than 2013-09-30 | Тугушев Илья [80%] |  |
| 370 | 1.4.4.14.23.4.2 | Пролведение процедуры Revers Engineering для процессов |  | 7d | 2014-06-04 | 2014-06-12 | 369 | 52d | 0d |  | Наталья Смолянец (Смолянец) | 56h |
| 371 | 1.4.4.14.23.4.3 | Реализация в слое CMJ-CMSochi |  | 7d | 2014-06-04 | 2014-06-12 | 370SS | 52d |  |  | Антон Ганчев (Киев) | 56h |
| 372 | 1.4.4.14.23.5 | **Разработка коллекций** |  | 7d | 2014-06-20 | 2014-06-30 |  | 40d |  |  |  | 168h |
| 373 | 1.4.4.14.23.5.1 | Коллекции |  | 7d | 2014-06-20 | 2014-06-30 | 360, 357 | 40d | 0d |  | (БТЛ) Олег Еренцов; (БТЛ) Дмитрий Лякин; (БТЛ)Сергей Степыгин | 168h |
| 374 | 1.4.4.14.23.6 | Интеграция по ОО выполнена | milestone | 0d | 2014-06-30 | 2014-06-30 | 361, 362, 373 | 40d |  |  |  |  |
| 375 | 1.4.4.14.24 | **Интеграция с CMJ по "Кейсам"** |  | 25d? | 2014-05-30 | 2014-07-03 |  | 37d |  |  |  | 574.4h |
| 376 | 1.4.4.14.24.1 | Конфиг ДОП |  | 3d | 2014-05-30 | 2014-06-03 | 345 | 46d | 0d |  | Александр Власюк | 24h |
| 377 | 1.4.4.14.24.2 | Mapper |  | 5d | 2014-06-04 | 2014-06-10 | 376 | 46d | 0d |  | Александр Власюк | 40h |
| 378 | 1.4.4.14.24.3 | **Настраиваемые коллекции** |  | 8d? | 2014-06-11 | 2014-06-20 | 377 | 46d | 9d |  |  | 158.4h |
| 379 | 1.4.4.14.24.3.1 | **Конфигурация коллекций** |  | 7d | 2014-06-11 | 2014-06-19 |  | 46d | 0d |  |  | 152h |
| 380 | 1.4.4.14.24.3.1.1 | Типовая иерархия кастомных папок |  | 6d | 2014-06-11 | 2014-06-18 |  | 46d | 0d |  | Евгений Сафроненко | 48h |
| 381 | 1.4.4.14.24.3.1.2 | Доработка расширенного поиска |  | 7d | 2014-06-11 | 2014-06-19 | 380SS | 46d |  |  | Сергей Околот | 56h |
| 382 | 1.4.4.14.24.3.1.3 | Системные настройки для "Кейсов" |  | 6d | 2014-06-11 | 2014-06-18 | 380SS | 47d |  |  | Тимофей Билый | 48h |
| 383 | 1.4.4.14.24.3.2 | Проверка работы |  | 1d? | 2014-06-20 | 2014-06-20 | 379 | 46d |  |  | Глеб Ноздрачев [80%] | 6.4h |

Notes:
- 366: Системные настройки для ВнД (1дескр + 10типов) [NNN] 1 дн
- 367: Х тестовых РКК ВнД [YYY] 2ч
- 382: Системные настройки для ВнД (1дескр + 10типов) [NNN] 1 дн
- 383: Х тестовых РКК ВнД [YYY] 2ч

| ID | WBS | Task | Type | Duration | Start | Finish | Predecessors | Complete | Remaining | Total slack | Free slack | Constraint | Resources | Work | Actual work |
| --- | --- | --- | --- | --- | --- | --- | --- | --- | --- | --- | --- | --- | --- | --- | --- |
| 384 | 1.4.4.14.24.4 | **Перенос логики сервисов по "Кейсам"** |  | 7d | 2014-06-03 | 2014-06-12 |  |  |  | 52d |  |  |  | 112h |  |
| 385 | 1.4.4.14.24.4.1 | Задание поставлено | milestone | 0d | 2014-06-03 | 2014-06-03 | 376, 355 |  |  | 52d | 0d | start no earlier than 2013-09-30 | Тугушев Илья [80%] |  |  |
| 386 | 1.4.4.14.24.4.2 | Пролведение процедуры Revers Engineering для процессов |  | 7d | 2014-06-04 | 2014-06-12 | 385 |  |  | 52d | 0d |  | Наталья Смолянец (Смолянец) | 56h |  |
| 387 | 1.4.4.14.24.4.3 | Реализация в слое CMJ-CMSochi |  | 7d | 2014-06-04 | 2014-06-12 | 386SS |  |  | 52d |  |  | Антон Ганчев (Киев) | 56h |  |
| 388 | 1.4.4.14.24.5 | **Разработка коллекций** |  | 10d | 2014-06-20 | 2014-07-03 |  |  |  | 37d |  |  |  | 240h |  |
| 389 | 1.4.4.14.24.5.1 | Коллекции |  | 10d | 2014-06-20 | 2014-07-03 | 376, 357 |  |  | 37d | 0d |  | (БТЛ) Олег Еренцов; (БТЛ) Дмитрий Лякин; (БТЛ)Сергей Степыгин | 240h |  |
| 390 | 1.4.4.14.24.6 | Интеграция по "Кейсам" выполнена | milestone | 0d | 2014-07-03 | 2014-07-03 | 377, 378, 389 |  |  | 37d |  |  |  |  |  |
| 391 | 1.4.4.14.25 | Основные коннеторы реализованы | milestone | 0d | 2013-12-09 | 2013-12-09 |  |  |  | 150d | 0d | start no earlier than 2013-12-09 |  |  |  |
| 392 | 1.4.4.14.26 | REST-протокол для АРМа - проектирование |  | 3d | 2013-06-25 | 2013-06-27 | 31 |  |  | 291d |  |  | Тугушев Илья; Денис Митавский [20%]; Андрей Пирожков [20%] | 33.6h |  |
| 393 | 1.4.4.15 | **Проверка работоспособности решения - Организация демонстрации** |  | 25d? | 2013-12-09 | 2014-01-22 | 391 |  |  | 150d |  |  |  | 448h |  |
| 394 | 1.4.4.15.1 | Подготовка стенда |  | 3d | 2013-12-09 | 2013-12-11 | 395SF |  |  | 172d |  |  | Влад Симоненко; Аналитик | 48h |  |
| 395 | 1.4.4.15.2 | Подготовка прототипа |  | 20d? | 2013-12-09 | 2014-01-15 |  |  |  | 150d | 0d |  | Влад Симоненко; Аналитик | 320h |  |
| 396 | 1.4.4.15.3 | Проведение демонстраций |  | 3d | 2014-01-16 | 2014-01-20 | 395 |  |  | 150d | 0d |  | Влад Симоненко; Аналитик | 48h |  |
| 397 | 1.4.4.15.4 | Анализ результатов - выводы |  | 2d | 2014-01-21 | 2014-01-22 | 396 |  |  | 150d |  |  | Влад Симоненко; Аналитик | 32h |  |
| 398 | 1.4.4.16 | **Сервис работы с вложениями** |  | 22d | 2013-07-11 A | 2013-08-09 A |  | 100% |  |  |  |  |  | 176h | 176h |
| 399 | 1.4.4.16.1 | Принято решение о проектировании сервиса обработки вложений | milestone | 0d | 2013-07-11 A | 2013-07-11 A |  | 100% |  |  |  | start no earlier than 2013-07-11 |  |  |  |
| 400 | 1.4.4.16.2 | API |  | 5d | 2013-07-11 A | 2013-07-17 A | 399 | 100% |  |  |  |  | Андрей Цветков | 40h | 40h |
| 401 | 1.4.4.16.3 | Реализация |  | 7d | 2013-07-18 A | 2013-07-26 A | 400 | 100% |  |  |  |  | Влад Симоненко | 56h | 56h |
| 402 | 1.4.4.16.4 | Исследования по перехватчику конца транзакции |  | 5d | 2013-07-29 A | 2013-08-02 A | 401 | 100% |  |  |  |  | Влад Симоненко | 40h | 40h |
| 403 | 1.4.4.16.5 | Чистка файлов в случае отката транзакции |  | 5d | 2013-08-05 A | 2013-08-09 A | 402 | 100% |  |  |  |  | Влад Симоненко | 40h | 40h |
| 404 | 1.4.4.17 | **Работа с отчетами** |  | 30d | 2013-11-01 A | 2013-12-12 |  | 99% | 0d | 171d |  |  |  | 240h | 240h |
| 405 | 1.4.4.17.1 | Определен состав отчетов | milestone | 0d | 2013-11-01 | 2013-11-01 |  |  |  | 201d |  | start no earlier than 2013-11-01 |  |  |  |
| 406 | 1.4.4.17.2 | Система готова к интеграции с модулем отчетов | milestone | 0d | 2013-11-01 A | 2013-11-01 A | 405 | 100% |  |  |  | start no earlier than 2013-09-30 | Денис Митавский [50%]; Андрей Цветков |  |  |
| 407 | 1.4.4.17.3 | JDBC-драйвер для системы построения отчётов |  | 10d | 2013-11-01 A | 2013-11-14 A | 59, 406 | 100% |  |  |  |  | (БТЛ) Михаил Ларин | 80h | 80h |
| 408 | 1.4.4.17.4 | Интеграция с Jasper Reports |  | 20d | 2013-11-15 A | 2013-12-12 A | 407, 74 | 100% |  |  |  |  | (БТЛ) Михаил Ларин | 160h | 160h |

Notes:
- 406: Используя язык запросов коллеций
- 407: Используя язык запросов коллеций

| ID | WBS | Task | Type | Duration | Start | Finish | Predecessors | Complete | Remaining | Total slack | Free slack | Constraint | Resources | Work | Actual work |
| --- | --- | --- | --- | --- | --- | --- | --- | --- | --- | --- | --- | --- | --- | --- | --- |
| 409 | 1.4.4.18 | **GUI** |  | 257d? | 2013-04-22 A | 2014-05-06 |  | 42% | 148.43d? | 76d | 0d |  |  | 2112h | 878.4h |
| 410 | 1.4.4.18.1 | Принято решение о применении GWT-компонентов | milestone | 0d | 2013-07-22 A | 2013-07-22 A |  | 100% |  |  |  | start no earlier than 2013-07-22 |  |  |  |
| 411 | 1.4.4.18.2 | Адаптация компонентов GUI из СМ4 для наложения на архитектуру см5 |  | 30d | 2013-07-22 A | 2013-09-02 A | 410 | 100% |  |  |  | start no earlier than 2013-07-11 | Тимофей Билый; Алексей Львов | 480h | 480h |
| 412 | 1.4.4.18.3 | Изучение GWT/Настройка CMJ 4 для дебага |  | 4d | 2013-08-05 A | 2013-08-08 A |  | 100% |  |  |  | start no earlier than 2013-08-05 | Андрей Карандей | 32h | 32h |
| 413 | 1.4.4.18.4 | Разработка базовой архитектуры GUI на основе GWT-компонентов |  | 3d | 2013-07-22 A | 2013-07-24 A | 410 | 100% |  |  |  |  | Денис Митавский | 24h | 24h |
| 414 | 1.4.4.18.5 | Интеграция с JAAS/Аутентификация |  | 5d | 2013-07-31 A | 2013-08-06 A | 413 | 100% |  |  |  | start no earlier than 2013-07-08 | Денис Митавский | 40h | 40h |
| 415 | 1.4.4.18.6 | Архитектура разметки главного экрана |  | 2d | 2013-08-07 A | 2013-08-08 A | 414 | 100% |  |  |  |  | Денис Митавский [50%] | 8h | 8h |
| 416 | 1.4.4.18.7 | **Панель навигации** |  | 29d | 2013-08-09 A | 2013-09-18 |  | 85% | 4.35d | 225d |  |  |  | 56h | 46.4h |
| 417 | 1.4.4.18.7.1 | Проектирование - панель навигации |  | 2d | 2013-08-09 A | 2013-08-12 A | 415 | 100% |  |  |  |  | Денис Митавский [50%] | 8h | 8h |
| 418 | 1.4.4.18.7.2 | Разработка - панель навигации |  | 6d | 2013-09-11 A | 2013-09-18 | 417, 420 | 80% | 1.2d | 225d | 0d |  | Андрей Карандей | 48h | 38.4h |
| 419 | 1.4.4.18.8 | GUI - архитектура плагинов/дочерних плагинов. Базис |  | 15d | 2013-08-13 A | 2013-09-03 A | 417 | 100% |  |  |  |  | Денис Митавский | 120h | 120h |
| 420 | 1.4.4.18.9 | Базовая реализация архитектуры плагинов |  | 5d | 2013-09-04 A | 2013-09-10 A | 419 | 100% |  |  |  |  | Андрей Карандей | 40h | 40h |
| 421 | 1.4.4.18.10 | **GUI - плагин отображения коллекций** |  | 15d | 2013-09-04 | 2013-09-24 | 419 |  |  | 226d |  |  |  | 64h |  |
| 422 | 1.4.4.18.10.1 | Проектирование |  | 2d | 2013-09-04 | 2013-09-05 | 419 |  |  | 235d | 0d |  | Денис Митавский | 16h |  |
| 423 | 1.4.4.18.10.2 | Разработка |  | 6d | 2013-09-17 | 2013-09-24 | 429 |  |  | 226d |  |  | Ярослав Бондарчук | 48h |  |
| 424 | 1.4.4.18.11 | **GUI - действия** |  | 96d | 2013-04-22 A | 2013-09-09 |  | 13% | 84d | 234d | 0d |  |  | 8h | 4h |
| 425 | 1.4.4.18.11.1 | Проектирование |  | 2d | 2013-09-06 A | 2013-09-09 | 422 | 50% | 1d | 234d |  |  | Денис Митавский [50%] | 8h | 4h |
| 426 | 1.4.4.18.11.2 | Разработка |  | 6d | 2013-04-22 | 2013-04-29 |  |  |  | 324d |  |  |  |  |  |
| 427 | 1.4.4.18.12 | **Формы встроенного GUI** |  | 15d | 2013-09-10 A | 2013-09-30 |  | 38% | 9.38d | 222d |  |  |  | 124h | 44h |
| 428 | 1.4.4.18.12.1 | Конфигурация-архитектура |  | 1d | 2013-09-10 A | 2013-09-10 A | 425 | 100% |  |  |  |  | Денис Митавский [50%] | 4h | 4h |
| 429 | 1.4.4.18.12.2 | Маппинг на объекты |  | 2d | 2013-09-13 A | 2013-09-16 A | 428 | 100% |  |  |  |  | Ярослав Бондарчук | 16h | 16h |
| 430 | 1.4.4.18.12.3 | API GWT client-server |  | 3d | 2013-09-13 A | 2013-09-17 A | 428 | 100% |  |  |  |  | Денис Митавский | 24h | 24h |
| 431 | 1.4.4.18.12.4 | Реализация чтения |  | 5d | 2013-09-24 | 2013-09-30 | 49 |  |  | 167d | 91d |  | Денис Митавский | 40h |  |
| 432 | 1.4.4.18.12.5 | Реализация сохранения |  | 5d | 2013-09-19 | 2013-09-25 | 418, 430 |  |  | 225d |  |  | Андрей Карандей | 40h |  |

| ID | WBS | Task | Duration | Start | Finish | Predecessors | Complete | Remaining | Total slack | Free slack | Constraint | Resources | Work | Actual work |
| --- | --- | --- | --- | --- | --- | --- | --- | --- | --- | --- | --- | --- | --- | --- |
| 433 | 1.4.4.18.13 | **GUI - поиск** | 32d | 2013-12-23 | 2014-02-14 |  |  |  | 76d |  |  |  | 256h |  |
| 434 | 1.4.4.18.13.1 | GUI - поиск. Проектирование | 20d | 2013-12-23 | 2014-01-29 |  |  |  | 76d | 0d | start no earlier than 2013-12-23 | Игорь Петров | 160h |  |
| 435 | 1.4.4.18.13.2 | GUI - поиск. Реализация | 12d | 2014-01-30 | 2014-02-14 | 434 |  |  | 76d | 0d |  | Игорь Петров | 96h |  |
| 436 | 1.4.4.18.14 | **GUI - виджеты разработка** | 141d? | 2013-10-01 A | 2014-04-25 |  | 9% | 128.18d? | 76d |  |  |  | 840h | 40h |
| 437 | 1.4.4.18.14.1 | Дата/время | 5d | 2013-10-01 A | 2013-10-07 A | 431 | 100% |  |  |  |  | Тимофей Билый | 40h | 40h |
| 438 | 1.4.4.18.14.2 | Остальные без особенностей стиля ст.лебедева (базовый набор) | 25d? | 2014-02-17 | 2014-03-21 | 431, 435, 408 |  |  | 76d | 0d |  | Тимофей Билый; Алексей Львов | 400h |  |
| 439 | 1.4.4.18.14.3 | Остальные для стиля ст.лебедева | 25d? | 2014-03-24 | 2014-04-25 | 438 |  |  | 76d | 0d |  | Андрей Карандей; Алексей Львов | 400h |  |
| 440 | 1.4.4.18.15 | **GUI - брендинг, стилизация, темы** | 5d | 2014-04-28 | 2014-05-06 |  |  |  | 76d |  |  |  | 20h |  |
| 441 | 1.4.4.18.15.1 | Концепция | 5d | 2014-04-28 | 2014-05-06 | 434, 438, 439 |  |  | 76d |  |  | Денис Митавский [50%] | 20h |  |
| 442 | 1.4.4.19 | Тестирование производительности | 25d | 2013-09-10 A | 2013-10-14 | 424 | 80% | 5d | 214d |  |  | (БТЛ)Сергей Степыгин; (БТЛ) Дмитрий Лякин | 400h | 320h |
| 443 | 1.4.4.20 | **Дополнительные сервисы платформы** | 227d | 2013-09-10 A | 2014-08-07 |  | 26% | 168.29d | 12d |  |  |  | 1512h | 382.8h |
| 444 | 1.4.4.20.1 | Расширение функциональности DAO (требования CMJ4.1, базовые требования) | 30d | 2013-12-09 A | 2014-01-29 A | 36, 391 | 100% |  |  |  |  | Валерий Мацукевич | 240h | 240h |
| 445 | 1.4.4.20.2 | Защита конфигурационных файлов от изменений | 21d | 2014-01-30 A | 2014-02-27 | 444 | 85% | 3.15d | 12d | 0d |  | Валерий Мацукевич | 168h | 142.8h |
| 446 | 1.4.4.20.3 | Выделение конфигурации GUI в отдельные сущности, к изменению формата которых система не будет восприимчива | 20d | 2014-02-28 | 2014-03-27 | 445 |  |  | 12d | 0d |  | Валерий Мацукевич | 160h |  |
| 447 | 1.4.4.20.4 | Версионность/аудит | 20d | 2014-03-28 | 2014-04-24 | 445, 446 |  |  | 12d | 0d |  | Валерий Мацукевич | 160h |  |
| 448 | 1.4.4.20.5 | Блокировки бизнес-объектов | 21d | 2014-04-25 | 2014-05-28 | 447 |  |  | 12d | 0d |  | Валерий Мацукевич | 168h |  |
| 449 | 1.4.4.20.6 | Описание структуры модуля Делопроизводство | 20d | 2013-09-10 | 2013-10-07 | 21, 15, 14, 65 |  |  | 197d | 4d |  | Владимир Панов | 160h |  |
| 450 | 1.4.4.20.7 | Уточнение состава и сроков работ | 2d | 2014-05-07 | 2014-05-08 | 409 |  |  | 76d |  |  | Андрей Пирожков; Денис Митавский; Тугушев Илья | 48h |  |
| 451 | 1.4.4.20.8 | Кросс-СУБД, поддержка Oracle | 20d | 2014-05-29 | 2014-06-25 | 448 |  |  | 12d | 0d |  | Валерий Мацукевич | 160h |  |
| 452 | 1.4.4.20.9 | SQL-trace | 16d | 2014-06-26 | 2014-07-17 | 451 |  |  | 12d | 0d |  | Валерий Мацукевич | 128h |  |
| 453 | 1.4.4.20.10 | Локализация (на уровне конфигурации) | 15d | 2014-07-18 | 2014-08-07 | 452 |  |  | 12d |  |  | Сергей Околот | 120h |  |
| 454 | 1.4.4.21 | **Интеграция с системой управления учетными записями** | 14d | 2014-05-29 | 2014-06-17 | 448 |  |  | 49d |  |  |  | 56h |  |
| 455 | 1.4.4.21.1 | Интеграция с ActiveDirectory | 14d | 2014-05-29 | 2014-06-17 |  |  |  | 49d |  |  | Андрей Пирожков [50%] | 56h |  |
| 456 | 1.4.4.22 | **Расширение функций сервиса конфигурации** | 128d | 2013-07-09 A | 2014-01-14 A | 451 | 100% |  |  |  |  |  | 352h | 352h |
| 457 | 1.4.4.22.1 | Расширяемость конфигурации | 12d | 2013-07-09 A | 2013-12-11 A |  | 100% |  |  |  |  | Валерий Мацукевич | 96h | 96h |
| 458 | 1.4.4.22.2 | Изменение и дополнение конфигурации системы | 16d | 2013-12-12 A | 2014-01-14 A | 457 | 100% |  |  |  |  | Андрей Пирожков; Роман Митинков | 256h | 256h |

Notes:
- 442: - полноценное, продуманное, конфигурируемое, полностью автоматизированное (вплоть до промежуточного сбора статистики в СУБД перед запуском тестов производительности) с автоматической генерацией таблиц и графиков, с поддержкой нагружающих потоков и т.п.
- 447: История модификации объекта / Версионность - на бизнес слой
- 451: Кросс-СУБД, поддержка Oracle
- 453: Поддержка ресурсных файлов - в расках конфигурирования ресурсных файлов / Подмена языка в интерфейсе (передача локали пользоввателю) -

| ID | WBS | Task | Type | Duration | Start | Finish | Predecessors | Complete | Remaining | Total slack | Free slack | Constraint | Resources | Work | Actual work |
| --- | --- | --- | --- | --- | --- | --- | --- | --- | --- | --- | --- | --- | --- | --- | --- |
| 459 | 1.4.4.23 | **Сервис для работы с системным журналом** |  | 15d | 2014-01-15 A | 2014-02-04 | 458 | 67% | 5d | 141d |  |  |  | 120h | 80h |
| 460 | 1.4.4.23.1 | Ведение журнала действий пользователей и действий с объектами системы |  | 10d | 2014-01-15 A | 2014-01-28 A |  | 100% |  |  |  |  | (БТЛ) Михаил Ларин | 80h | 80h |
| 461 | 1.4.4.23.2 | Настройка уровня логирования |  | 5d | 2014-01-29 | 2014-02-04 | 460 |  |  | 141d |  |  | Андрей Карандей | 40h |  |
| 462 | 1.4.5 | **Подсистема нотификаций** |  | 46d | 2014-01-20 A | 2014-03-24 |  | 9% | 41.82d | 175d |  |  |  | 640h | 40h |
| 463 | 1.4.5.1 | Описание принципов устройства и функционирования подсистемы нотификаций |  | 10d | 2014-01-20 A | 2014-01-31 |  | 50% | 5d | 175d | 0d |  | Андрей Пирожков | 80h | 40h |
| 464 | 1.4.5.2 | Подготовка проекта подсистемы нотификаций |  | 10d | 2014-02-03 | 2014-02-14 | 463 |  |  | 175d | 0d |  | Андрей Пирожков; (БТЛ) Михаил Ларин | 160h |  |
| 465 | 1.4.5.3 | **Разработка подсистемы** |  | 20d | 2014-02-25 | 2014-03-24 |  |  |  | 175d |  |  |  | 400h |  |
| 466 | 1.4.5.3.1 | Доработка существующих сервисов |  | 15d | 2014-02-25 | 2014-03-17 | 464FS+6d |  |  | 175d | 0d |  | (БТЛ) Михаил Ларин [50%]; Андрей Цветков | 140h |  |
| 467 | 1.4.5.3.2 | Разработка специфичного функционала подсистемы |  | 15d | 2014-02-25 | 2014-03-17 | 466SS |  |  | 175d | 0d |  | (БТЛ) Михаил Ларин [50%]; Роман Митинков | 140h |  |
| 468 | 1.4.5.3.3 | Сборка и отладка |  | 5d | 2014-03-18 | 2014-03-24 | 466, 467 |  |  | 175d |  |  | (БТЛ) Михаил Ларин; Андрей Цветков; Роман Митинков | 120h |  |
| 469 | 1.4.6 | **Архитектурный комитет** |  | 248d | 2013-06-11 A | 2014-06-06 | 15 | 45% | 136.06d | 124d |  |  |  | 2498.4h | 1535.2h |
| 470 | 1.4.6.1 | Контроль и корректировка технических решений "Архитектурный комитет" |  | 248d | 2013-06-11 A | 2014-06-06 |  | 52% | 118d | 124d |  |  | Тугушев Илья [20%]; Андрей Пирожков [23.2%]; Денис Митавский [20%]; WEB-дизайнер [20%]; Аналитик [20%]; Владимир Панов [50%] | 2498.4h | 1535.2h |
| 471 | 1.4.6.2 | Разработка серверной логики модуля CMJ |  | 40d | 2013-10-14 | 2013-12-06 | 15, 44, 449 |  |  | 121d | 37d |  |  |  |  |
| 472 | 1.4.7 | **Разработка Форм для АРМ тематических администраторов** |  | 121.75d | 2013-12-23 A | 2014-06-25 | 70 | 22% | 94.75d | 111d |  |  |  | 880h | 204h |
| 473 | 1.4.7.1 | Предварительный Сбор и подготовка требований |  | 20d | 2013-12-23 A | 2014-01-30 A |  | 100% |  |  |  |  | Пестова Ольга (Киев) | 160h | 160h |
| 474 | 1.4.7.2 | Уточнение стребований к АРМ тематичесхких админов |  | 30d | 2014-02-10 A | 2014-03-21 |  | 18% | 24.5d | 111d | 0d | start no earlier than 2014-02-10 | Тимофей Щербатый | 240h | 44h |
| 475 | 1.4.7.3 | **Подготовка работы со списками значений** |  | 30d | 2014-03-24 | 2014-05-06 |  |  |  | 111d |  |  |  | 240h |  |
| 476 | 1.4.7.3.1 | Разработка функционала учета организационно штатной структуры |  | 10d | 2014-03-24 | 2014-04-04 | 474 |  |  | 111d | 0d |  | Ярослав Бондарчук | 80h |  |
| 477 | 1.4.7.3.2 | Разработка функционала с рубрикаторами (сложные справочники) |  | 10d | 2014-04-07 | 2014-04-18 | 476 |  |  | 111d | 0d |  | Ярослав Бондарчук | 80h |  |
| 478 | 1.4.7.3.3 | Разработка функционала для работы с словарями данных (простые, линейные справочники) |  | 10d | 2014-04-21 | 2014-05-06 | 477 |  |  | 111d | 0d |  | Ярослав Бондарчук | 80h |  |
| 479 | 1.4.7.4 | Разработка форм для работы в GUI (настройки форм) |  | 10d | 2014-05-07 | 2014-05-21 | 478 |  |  | 111d | 0d |  | Ярослав Бондарчук | 80h |  |
| 480 | 1.4.7.5 | Разработка структуры рабочего места АРМ |  | 5d | 2014-05-22 | 2014-05-28 | 479 |  |  | 111d | 0d |  |  |  |  |
| 481 | 1.4.7.6 | Разработка специфичных для форм АРМ элементов GUI |  | 20d | 2014-05-29 | 2014-06-25 | 480 |  |  | 111d |  |  | Ярослав Бондарчук | 160h |  |
| 482 | 1.4.8 | **Подготовка базового набора отчетов** |  | 110d | 2014-02-10 | 2014-07-16 |  |  |  | 96d |  |  |  | 1560h |  |
| 483 | 1.4.8.1 | Данные для подготовки базового набора отчетов собраны | milestone | 0d | 2014-02-10 | 2014-02-10 |  |  |  | 96d | 0d | start no earlier than 2014-02-10 |  |  |  |
| 484 | 1.4.8.2 | Структура данных для отчетов подготовлена и описана | milestone | 0d | 2014-02-10 | 2014-02-10 | 483 |  |  | 96d | 0d |  |  |  |  |
| 485 | 1.4.8.3 | Механизм управления отчетными формами подготовлен | milestone | 0d | 2014-02-10 | 2014-02-10 | 484 |  |  | 96d | 0d |  |  |  |  |
| 486 | 1.4.8.4 | Уточнение требований по шаблонам отчетов |  | 20d | 2014-02-10 | 2014-03-07 | 485 |  |  | 96d | 0d |  | Евгения Капустина [50%] | 80h |  |
| 487 | 1.4.8.5 | Требования по отображению отчетов сформированы | milestone | 0d | 2014-03-07 | 2014-03-07 | 486 |  |  | 96d |  |  |  |  |  |
| 488 | 1.4.8.6 | GUI - отображение отчётов |  | 15d | 2014-03-10 | 2014-03-28 | 487 |  |  | 171d |  |  | Денис Митавский | 120h |  |
| 489 | 1.4.8.7 | Подготовка отчетов |  | 40d | 2014-03-10 | 2014-05-06 | 487 |  |  | 96d | 0d |  | Влад Симоненко; Алексей Львов; Андрей Карандей | 960h |  |
| 490 | 1.4.8.8 | Сопряжение с мобильным клиентом СМ4 |  | 50d | 2014-05-07 | 2014-07-16 | 471, 489 |  |  | 96d |  |  | Java разработчик3 | 400h |  |

Notes:
- 459: Сервис для работы с системным журналомВедение журнала действий пользователей и действий с объектами системы
- 460: Ведение журнала действий пользователей и действий с объектами системы

| ID | WBS | Task | Type | Duration | Start | Finish | Predecessors | Total slack | Free slack | Constraint | Resources | Work |
| --- | --- | --- | --- | --- | --- | --- | --- | --- | --- | --- | --- | --- |
| 491 | 1.4.9 | **Тестирование** |  | 68d? | 2014-08-08 | 2014-11-11 | 20 | 12d | 0d |  |  | 2544h |
| 492 | 1.4.9.1 | **Функциональное тестирование** |  | 53d? | 2014-08-08 | 2014-10-21 |  | 12d |  |  |  | 2224h |
| 493 | 1.4.9.1.1 | Подготовка ПМИ |  | 5d | 2014-08-08 | 2014-08-14 |  | 12d | 0d |  | Тест Аналитик | 40h |
| 494 | 1.4.9.1.2 | Разработка "сценариев тестирования" |  | 15d | 2014-08-08 | 2014-08-28 |  | 17d | 0d |  | Тест Аналитик | 120h |
| 495 | 1.4.9.1.3 | Разработка модели нагрузки для тестирования |  | 10d | 2014-08-15 | 2014-08-28 | 493 | 17d | 0d |  | Тест Аналитик | 80h |
| 496 | 1.4.9.1.4 | Адаптация автоматизированных сценариев от СМ4 для создания нагрузки |  | 25d | 2014-08-15 | 2014-09-18 | 493 | 12d | 0d |  | Влад Симоненко | 200h |
| 497 | 1.4.9.1.5 | **Проведение тестирования** |  | 38d? | 2014-08-29 | 2014-10-21 | 494, 495 | 17d |  |  |  | 1784h |
| 498 | 1.4.9.1.5.1 | **Подготовка среды тестирования** |  | 10d? | 2014-08-29 | 2014-09-11 |  | 17d |  |  |  | 200h |
| 499 | 1.4.9.1.5.1.1 | Разворачивание системы |  | 5d? | 2014-08-29 | 2014-09-04 | 501SF | 60d | 0d |  | Влад Симоненко | 40h |
| 500 | 1.4.9.1.5.1.2 | Система готова для подключения инструментов мониторинга | milestone | 0d | 2014-09-04 | 2014-09-04 | 499 | 60d |  |  |  |  |
| 501 | 1.4.9.1.5.1.3 | Наполнение данными |  | 10d? | 2014-08-29 | 2014-09-11 | 489 | 17d | 5d |  | Влад Симоненко; Java разработчик6 | 160h |
| 502 | 1.4.9.1.5.2 | Среда тестирования готова | milestone | 0d | 2014-09-18 | 2014-09-18 | 501, 496 | 12d | 0d | start no earlier than 2012-05-24 |  |  |
| 503 | 1.4.9.1.5.3 | Проведение тестирования |  | 10d | 2014-09-19 | 2014-10-02 | 502 | 12d | 0d |  | Тест Аналитик; Тестировщик [200%] | 240h |
| 504 | 1.4.9.1.5.4 | **Обработка результатов тестирования и внесение изменений в модуль** |  | 15d | 2014-10-01 | 2014-10-21 | 503FS-2d | 12d |  |  |  | 1344h |
| 505 | 1.4.9.1.5.4.1 | Устранение замечаний по результатам функционального тестирования |  | 15d | 2014-10-01 | 2014-10-21 |  | 12d | 0d |  | Java разработчик5; Влад Симоненко [300%]; Валерий Мацукевич; Java разработчик3; Java разработчик4; Андрей Карандей; Алексей Львов; Андрей Цветков | 1200h |
| 506 | 1.4.9.1.5.4.2 | Проверка устранения замечаний |  | 6d | 2014-10-14 | 2014-10-21 | 505FS-6d | 12d | 0d |  | Тест Аналитик; Тестировщик [200%] | 144h |
| 507 | 1.4.9.2 | **Нагрузочное тестирование** |  | 28d | 2014-10-02 | 2014-11-11 | 493 | 12d |  |  |  | 320h |
| 508 | 1.4.9.2.1 | Стенд для нагрузочного тестирования подготовлен | milestone | 0d | 2014-10-02 | 2014-10-02 | 503 | 25d | 13d | finish no earlier than 2012-06-09 |  |  |
| 509 | 1.4.9.2.2 | Проведения нагрузочного тестирования |  | 10d | 2014-10-22 | 2014-11-04 | 506, 496, 508 | 12d | 0d |  | Влад Симоненко; Тест Аналитик; Тестировщик | 240h |
| 510 | 1.4.9.2.3 | Обработка результатов нагрузочного тестирования |  | 5d | 2014-11-05 | 2014-11-11 | 509 | 12d |  |  | Тест Аналитик; Тестировщик | 80h |
| 511 | 1.4.10 | **Подготовка документации** |  | 80d | 2014-08-08 | 2014-11-27 | 491SS | 0d |  |  |  | 640h |
| 512 | 1.4.10.1 | Разработка документа "Концепция системы " |  | 40d | 2014-08-08 | 2014-10-02 |  | 0d |  |  | Владимир Панов | 320h |
| 513 | 1.4.10.2 | Разработка "Software Architecture Document" |  | 40d | 2014-10-03 | 2014-11-27 | 512 | 0d |  |  | Владимир Панов | 320h |
| 514 | 1.4.10.3 | Документы подготовлены | milestone | 0d | 2014-11-27 | 2014-11-27 | 513 | 0d |  |  |  |  |
